# QuanTri

How a schedule from MS Project changed from version to version. A marks actual dates.

## Version 1 (saved 2024-04-19)

Note of the change: Create New.mpp

| ID | WBS | Task | Duration | Start | Finish | Predecessors | Complete | Total float | Constraint |
| --- | --- | --- | --- | --- | --- | --- | --- | --- | --- |
| 1 | 1 | **XÂY DỰNG HỆ THỐNG QUẢN LÝ KẾT NỐI VÀ CUNG CẤP GIA SƯ TP-HUẾ** | 44d? | 2024-02-02 A | 2024-04-03 |  | 1% | 0d |  |
| 2 |  | Bản kế hoạch dự án | 1d | 2024-02-21 A | 2024-02-21 A |  | 100% |  | finish no earlier than 2024-02-21 |
| 3 |  | Thời gian phê duyệt dự án | 1d | 2024-02-22 A | 2024-02-22 A | 2 | 100% |  | start no earlier than 2024-02-22 |
| 4 | 1.3 | **Phân Tích** | 15d | 2024-02-23 | 2024-03-14 |  |  | 0d |  |
| 5 | 1.3.1 | **Thu thập, Phân tích Nhu Cầu Khách Hàng** | 2d | 2024-02-23 | 2024-02-26 |  |  | 0d |  |
| 6 | 1.3.1.1 | **Trao đổi, thu nhập yêu cầu khách hàng** | 1d | 2024-02-23 | 2024-02-23 |  |  | 0d |  |
| 7 |  | Gặp mặt, trao đổi với khách hàng | 0.5d | 2024-02-23 | 2024-02-23 | 3 |  | -11.5d |  |
| 8 |  | Thu nhập, ghi chú các thông tin, nhu cầu của khách hàng | 0.5d | 2024-02-23 | 2024-02-23 | 7 |  | -11.5d |  |
| 9 | 1.3.1.2 | **Phân tích nhu cầu khách hàng** | 1d | 2024-02-26 | 2024-02-26 |  |  | 0d |  |
| 10 |  | Chọn lọc, phân loại các yêu cầu của khách hàng | 3h | 2024-02-26 | 2024-02-26 | 8 |  | -11.5d |  |
| 11 |  | Xác định các yêu cầu chức năng và phi chức năng | 2.5h | 2024-02-26 | 2024-02-26 | 10 |  | -11.5d |  |
| 12 |  | Tổng kết những thông tin đã thu nhập và phân tích | 1.5h | 2024-02-26 | 2024-02-26 | 11 |  | -11.5d |  |
| 13 |  | Xác định những yêu cầu đáp ứng được và không đáp ứng được | 1h | 2024-02-26 | 2024-02-26 | 12 |  | -11.5d |  |
| 14 | 1.3.2 | **Lên ý tưởng, Phân tích cấu trúc phần mềm, phi chức năng, thông số kỹ thuật, giao diện, xác định rủi ro, ước lượng công việc** | 10d | 2024-02-27 | 2024-03-11 |  |  | 0d |  |
| 15 | 1.3.2.1 | **Tổ chức và lên ý tưởng** | 1d | 2024-02-27 | 2024-02-27 |  |  | 0d |  |
| 16 |  | Tổ chức họp đội ngũ trong việc lên ý tưởng | 0.4d | 2024-02-27 | 2024-02-27 | 13 |  | -11.5d |  |
| 17 |  | Xây dựng mô phỏng dự án | 0.6d | 2024-02-27 | 2024-02-27 | 16 |  | -11.5d |  |
| 18 | 1.3.2.2 | **Phân tích cấu trúc phần mềm** | 2d | 2024-02-28 | 2024-02-29 |  |  | 0d |  |
| 19 |  | Xác định và mô tả các chức năng cần thiết của hệ thống | 1d | 2024-02-28 | 2024-02-28 | 17 |  | -11.5d |  |
| 20 |  | Tạo biểu đồ usecase và mô tả chi tiết các yêu cầu chức năng | 1d | 2024-02-29 | 2024-02-29 | 19 |  | -11.5d |  |
| 21 | 1.3.2.3 | **Phân tích phi chức năng** | 1d | 2024-03-01 | 2024-03-01 |  |  | 0d |  |
| 22 |  | Xác định các yêu cầu như tiêu chuẩn về hiệu suất, bảo mật và giao diện người dùng | 1d | 2024-03-01 | 2024-03-01 | 20 |  | -11.5d |  |
| 23 | 1.3.2.4 | **Phân tích thông số kỹ thuật** | 1d | 2024-03-04 | 2024-03-04 |  |  | 0d |  |
| 24 |  | Xác định các yêu cầu kỹ thuật của hệ thống | 0.3d | 2024-03-04 | 2024-03-04 | 22 |  | -11.5d |  |
| 25 |  | Phân tích các thông số kỹ thuật về hiệu suất, dung lượng và độ tin cậy | 0.7d | 2024-03-04 | 2024-03-04 | 24 |  | -11.5d |  |
| 26 | 1.3.2.5 | **Phân tích giao diện** | 1d | 2024-03-05 | 2024-03-05 |  |  | 0d |  |
| 27 |  | Lên ý tưởng về giao diện theo yêu cầu | 1d | 2024-03-05 | 2024-03-05 | 25 |  | -11.5d |  |
| 28 | 1.3.2.6 | **Xác định rủi ro** | 2d | 2024-03-06 | 2024-03-07 |  |  | 0d |  |
| 29 |  | Phân tích các rủi ro tiềm ẩn trong dự án và đề xuất các biện pháp phòng ngừa | 1d | 2024-03-06 | 2024-03-06 | 27 |  | -11.5d |  |
| 30 |  | Xác định các vấn đề có thể phát sinh và các giải pháp giảm thiểu tác động của chúng | 1d | 2024-03-07 | 2024-03-07 | 29 |  | -11.5d |  |
| 31 | 1.3.2.7 | **Lập kế hoạch và ước lượng công việc** | 2d | 2024-03-08 | 2024-03-11 |  |  | 0d |  |
| 32 |  | Phân tích công việc cần thực hiện và ước lượng thời gian và nguồn lực cần thiết | 1d | 2024-03-08 | 2024-03-08 | 30 |  | -11.5d |  |
| 33 |  | Lập bảng phân rã công việc | 1d | 2024-03-11 | 2024-03-11 | 32 |  | -11.5d |  |
| 34 | 1.3.3 | **Lập Bảng Báo Cáo, Phản Hồi Khách Hàng** | 2d | 2024-03-12 | 2024-03-13 |  |  | 0d |  |
| 35 | 1.3.3.1 | **Lập bảng báo cáo, Phản hồi khách hàng** | 2d | 2024-03-12 | 2024-03-13 |  |  | 0d |  |
| 36 |  | Tạo tài liệu báo cáo về quá trình, các kết quả đạt được và kế hoạch cho giai đoạn tiếp theo của dự án | 1d | 2024-03-12 | 2024-03-12 | 33 |  | -11.5d |  |
| 37 |  | Liên hệ với khách hàng để trao đổi và xác nhận rằng phần mềm đã được thiết kế đáp ứng mong muốn của khách hàng | 1d | 2024-03-13 | 2024-03-13 | 36 |  | -11.5d |  |
| 38 |  | Chờ phê duyệt để tiến hành | 1d | 2024-03-14 | 2024-03-14 | 34 |  | -11.5d | finish no earlier than 2024-03-04 |
| 39 |  | Hoàn thành phân tích | 0d | 2024-03-14 | 2024-03-14 | 38 |  | -11.5d | finish no earlier than 2024-03-04 |
| 40 | 1.4 | **Thiết Kế** | 14d | 2024-03-15 | 2024-04-03 |  |  | 0d |  |
| 41 | 1.4.1 | **Thiết Kế CSDL** | 8d | 2024-03-15 | 2024-03-26 |  |  | 0d |  |
| 42 | 1.4.1.1 | **Thu nhập yêu cầu về dữ liệu từ bản báo cáo phân tích** | 1d | 2024-03-15 | 2024-03-15 |  |  | 0d |  |
| 43 |  | Xác định thông tin cần lưu trữ, các mối quan hệ giữa các đối tượng | 1d | 2024-03-15 | 2024-03-15 | 4 |  | 0d |  |
| 44 |  | Xác định các yêu cầu về hiệu suất và bảo mật dữ liệu | 1d | 2024-03-15 | 2024-03-15 | 4 |  | 0d |  |
| 45 | 1.4.1.2 | **Thiết kế mô hình dữ liệu** | 1d | 2024-03-18 | 2024-03-18 |  |  | 0d |  |
| 46 |  | Xác định các bảng dữ liệu, các mối quan hệ giữa các bảng trên | 1d | 2024-03-18 | 2024-03-18 | 42 |  | 0d |  |
| 47 |  | Xác định các ràng buộc và các truy vấn cần thiết để truy cập dữ liệu | 1d | 2024-03-18 | 2024-03-18 | 42 |  | 0d |  |
| 48 | 1.4.1.3 | **Thiết kế lược đồ quan hệ** | 2d | 2024-03-19 | 2024-03-20 |  |  | 0d |  |
| 49 |  | Định nghĩa cấu trúc cho mỗi bảng, bao gồm các trường (hoặc cột), xác định khóa chính và kiểu dữ liệu của các bảng trên | 2d | 2024-03-19 | 2024-03-20 | 45 |  | 0d |  |
| 50 |  | Xác định các thực thể, các thuộc tính, các quan hệ, các ràng buộc và các truy vấn cần thiết để truy cập dữ liệu | 2d | 2024-03-19 | 2024-03-20 | 45 |  | 0d |  |
| 51 | 1.4.1.4 | **Xây dựng lược đồ quan hệ** | 4d | 2024-03-21 | 2024-03-26 |  |  | 0d |  |
| 52 |  | Mô hình hóa cấu trúc dữ liệu đã thiết kế bằng cách sử dụng công cụ sơ đồ thực thể - quan hệ (ERD) | 1d | 2024-03-21 | 2024-03-21 | 48 |  | 0d |  |
| 53 |  | Vẽ biểu đồ biểu diễn lược đồ quan hệ | 1d | 2024-03-22 | 2024-03-22 | 52 |  | 0d |  |
| 54 |  | Chuẩn hóa cơ sở dữ liệu | 2d | 2024-03-25 | 2024-03-26 | 53 |  | 0d |  |
| 55 | 1.4.2 | **Thiết kế cấu trúc phần mềm** | 5d | 2024-03-27 | 2024-04-02 |  |  | 0d |  |
| 56 |  | Mô tả các module của hệ thống | 5d | 2024-03-27 | 2024-04-02 | 51 |  | 0d |  |
| 57 |  | Thiết kế biểu đồ tuần tự | 5d | 2024-03-27 | 2024-04-02 | 51 |  | 0d |  |
| 58 |  | Thiết kế biểu đồ hoạt động | 5d | 2024-03-27 | 2024-04-02 | 51 |  | 0d |  |
| 59 |  | Thiết kế biểu đồ thành phần | 5d | 2024-03-27 | 2024-04-02 | 51 |  | 0d |  |
| 60 | 1.4.3 | **Thiết kế giao diện** | 4d | 2024-03-15 | 2024-03-20 |  |  | 10d |  |
| 61 | 1.4.3.1 | **Thu thập, phân tích yêu cầu từ bản báo cáo phân tích** | 1d | 2024-03-15 | 2024-03-15 |  |  | 10d |  |
| 62 |  | Xác định nhóm đích của ứng dụng, nhu cầu của người dùng | 1d | 2024-03-15 | 2024-03-15 | 4 |  | 18d |  |
| 63 |  | Xác định các tính năng cần thiết của ứng dụng | 1d | 2024-03-15 | 2024-03-15 | 4 |  | 18d |  |
| 64 | 1.4.3.2 | **Lên ý tưởng thiết kế giao diện người dùng** | 3d | 2024-03-18 | 2024-03-20 |  |  | 10d |  |
| 65 |  | Xác định các thao tác, chức năng của từng đối tượng | 1d | 2024-03-18 | 2024-03-18 | 61 |  | 18d |  |
| 66 |  | Xác định cấu trúc và vị trí của các phần tử giao diện | 1d | 2024-03-18 | 2024-03-18 | 61 |  | 18d |  |
| 67 |  | Vẽ các bản thiết kế sơ bộ của giao diện người dùng | 1d | 2024-03-19 | 2024-03-19 | 66, 65 |  | 18d |  |
| 68 |  | Thiết kế mockup màn hình giao diện người dùng | 1d | 2024-03-20 | 2024-03-20 | 67 |  | 18d |  |
| 69 | 1.4.4 | **Thiết kế thành phần hệ thống** | 2d | 2024-03-27 | 2024-03-28 |  |  | 3d |  |
| 70 |  | Thiết kế thành phần bảo mật | 2d | 2024-03-27 | 2024-03-28 | 41 |  | 3d |  |

| ID | WBS | Task | Duration | Start | Finish | Predecessors | Total float | Constraint |
| --- | --- | --- | --- | --- | --- | --- | --- | --- |
| 71 |  | Xác định các thành phần như máy chủ, mạng, các dịch vụ hỗ trợ | 2d | 2024-03-27 | 2024-03-28 | 41 | 3d |  |
| 72 |  | Chờ Phê Duyệt Để Tiến Hành | 1d | 2024-04-03 | 2024-04-03 | 41, 55, 69 | 0d |  |
| 73 |  | Hoàn Thành Thiết Kế | 0d | 2024-04-03 | 2024-04-03 | 72 | 0d |  |
| 74 | 1.5 | **Triển Khai** | 13d | 2024-02-21 | 2024-03-08 |  | 0d |  |
| 75 | 1.5.1 | **Lập trình chức năng** | 6d | 2024-02-21 | 2024-02-28 |  | 0d |  |
| 76 |  | Phân tích logic hoạt động các tính năng và chức năng | 2d | 2024-02-21 | 2024-02-22 |  |  |  |
| 77 |  | Lập trình lớp, đối tượng và hàm xử lý chức năng | 1d | 2024-02-21 | 2024-02-21 |  |  |  |
| 78 |  | Lập trình module thực hiện chức năng cụ thể | 5d | 2024-02-21 | 2024-02-27 |  |  |  |
| 79 |  | Liên kết các module thành hệ thống tông thể | 1d | 2024-02-28 | 2024-02-28 | 78 |  |  |
| 80 | 1.5.2 | **Tương tác cơ sở dữ liệu** | 7d | 2024-02-21 | 2024-02-29 |  | 0d |  |
| 81 |  | Tạo cơ sở dữ liệu, bảng thuộc tính, ràng buộc trên sql | 2d | 2024-02-21 | 2024-02-22 |  |  |  |
| 82 |  | Viết mã truy vấn, hàm, thủ tục sql | 2d | 2024-02-23 | 2024-02-26 | 81 |  |  |
| 83 |  | Xử lý kết quả trả về từ CSDL | 1d | 2024-02-27 | 2024-02-27 | 82 |  |  |
| 84 |  | Lập trình tích hợp cơ sở dữ liệu vào các hàm chức năng của hệ thống | 2d | 2024-02-28 | 2024-02-29 | 83 |  |  |
| 85 | 1.5.3 | **Triển khai giao diện người dùng** | 5d | 2024-02-21 | 2024-02-27 |  | 0d |  |
| 86 |  | Phát triển giao diện (UI), hiển thị thông tin và tương tác người dùng | 2d | 2024-02-21 | 2024-02-22 |  |  |  |
| 87 |  | Lập trình các sự kiện hành vi của các UI tác động trực tiếp vào hệ thống | 3d | 2024-02-23 | 2024-02-27 | 86 |  |  |
| 88 | 1.5.4 | **Tối ưu hoá mã nguồn** | 6d | 2024-02-28 | 2024-03-06 |  | 0d |  |
| 89 |  | Kiểm tra, đánh giá và tối ưu mã nguồn | 3d | 2024-02-28 | 2024-03-01 | 87 |  |  |
| 90 |  | Kiểm tra tính đúng khi các chức năng hoạt động | 3d | 2024-02-28 | 2024-03-01 | 87 |  |  |
| 91 |  | Kiểm thử và sửa lỗi | 3d | 2024-03-04 | 2024-03-06 | 89, 90 |  |  |
| 92 | 1.5.5 | **Tạo tài liệu hoá logic** | 2d | 2024-03-07 | 2024-03-08 |  | 0d |  |
| 93 |  | Tạo tài tiệu mô tả chú thích, giải thích cách mã nguồn hoạt động | 2d | 2024-03-07 | 2024-03-08 | 88 |  |  |
| 94 |  | Tạo tài liệu kĩ thuật hướng dẫn sử dụng phần mềm | 2d | 2024-03-07 | 2024-03-08 | 88 |  |  |
| 95 | 1.6 | **Kiểm thử** | 41.5d | 2024-02-02 | 2024-04-01 |  | 0d |  |
| 96 | 1.6.1 | **Phân tích yêu cầu** | 5.5d | 2024-02-21 | 2024-02-28 |  | 25.5d |  |
| 97 |  | Thu nhập tài liệu đặc tả dự án | 1d | 2024-02-21 | 2024-02-21 |  | 25.5d |  |
| 98 |  | Nghiên cứu và phân tích yêu cầu trong tài liệu đặc tả | 3d | 2024-02-22 | 2024-02-26 | 97 | 25.5d |  |
| 99 |  | Xác định yêu cầu kiểm thử chức năng | 2d | 2024-02-22 | 2024-02-23 | 97 | 26.5d |  |
| 100 |  | Xác định yêu cầu kiểm thử phi chức năng | 1d | 2024-02-22 | 2024-02-22 | 97 | 27.5d |  |
| 101 |  | Trao đổi yêu cầu | 12h | 2024-02-27 | 2024-02-28 | 98, 99, 100 | 25.5d |  |
| 102 | 1.6.2 | **Lập kế hoạch kiểm thử** | 3.5d | 2024-02-27 | 2024-03-01 |  | 0d |  |
| 103 |  | Xác định phạm vi dự án | 1d | 2024-02-27 | 2024-02-27 |  |  |  |
| 104 |  | Xác định phương án tiếp cận | 1d | 2024-02-27 | 2024-02-28 |  |  |  |
| 105 |  | Xác định nguồn lực | 1d | 2024-02-27 | 2024-02-28 |  |  |  |
| 106 |  | Lên kế hoạch thiết kế công việc kiểm thử | 2d | 2024-02-28 | 2024-03-01 | 103, 104, 105 |  |  |
| 107 | 1.6.3 | **Thiết kế kịch bản kiểm thử** | 10d | 2024-03-04 | 2024-03-18 |  | 0d |  |
| 108 |  | Review tài liệu | 2d | 2024-03-04 | 2024-03-06 | 106 |  |  |
| 109 |  | Viết testcase/checklist | 3d | 2024-03-06 | 2024-03-11 | 108 |  |  |
| 110 |  | Chuẩn bị dữ liệu kiểm thử | 2d | 2024-03-11 | 2024-03-13 | 109 |  |  |
| 111 |  | Review testcase/checklist | 3d | 2024-03-13 | 2024-03-18 | 110 | 2.5d |  |
| 112 | 1.6.4 | **Thiết lập môi trường kiểm thử** | 2d | 2024-03-18 | 2024-03-20 |  | 0d |  |
| 113 |  | Thiết lập môi trường kiểm thử(sever/client/network) | 2d | 2024-03-18 | 2024-03-20 | 111 |  |  |
| 114 |  | Chuẩn bị testcase để kiểm tra xem môi trường cài đặt | 1d | 2024-03-18 | 2024-03-19 | 111 |  |  |
| 115 | 1.6.5 | **Thực hiện kiểm thử** | 9d | 2024-03-19 | 2024-04-01 |  | 0d |  |
| 116 |  | Thực hiện các testcase như thiết kế | 3d | 2024-03-19 | 2024-03-22 | 114 |  |  |
| 117 |  | So sánh kết quả/theo dõi tình trạng lỗi | 3d | 2024-03-19 | 2024-03-22 | 114 | 2.5d |  |
| 118 |  | Thử hiện kiểm thử lại để xác định các lỗ hổng đã được sửa chữa | 3d | 2024-03-22 | 2024-03-27 | 116, 117 | 2.5d |  |
| 119 |  | Đưa ra giải pháp | 2d | 2024-03-27 | 2024-03-29 | 118 | 2.5d |  |
| 120 |  | Đo và phân tích tiến độ | 1d | 2024-03-29 | 2024-04-01 | 119 |  |  |
| 121 |  | Báo cáo tình hình thực hiện dự án | 1d | 2024-03-29 | 2024-04-01 | 119 | 2.5d |  |
| 122 | 1.6.6 | **Đóng chu trình kiểm thử** | 1d | 2024-02-02 | 2024-02-02 |  | 0d |  |
| 123 |  | Tổng kết báo cáo kết quả | 1d | 2024-02-02 | 2024-02-02 |  | 43d | finish no earlier than 2024-02-02 |
| 124 |  | Đánh giá tiêu chí hoàn thành | 1d | 2024-02-02 | 2024-02-02 |  |  |  |
| 125 | 1.7 | **Bàn giao** | 2d? | 2024-02-21 | 2024-02-22 |  | 29d |  |
| 126 |  | Cài đặt phần mềm | 1d? | 2024-02-21 | 2024-02-21 |  | 29d |  |
| 127 |  | Hướng dẫn phần mềm | 1d? | 2024-02-22 | 2024-02-22 | 126 | 29d |  |

## Version 2 (saved 2024-04-19)

Note of the change: Chỉnh sửa lần 1

Last finish 2024-04-03 → 2024-04-01 (-2d).

Removed: 24 Xác định các yêu cầu kỹ thuật của hệ thống

Changed:

| ID | Task | Start | Finish | Duration | Total float | Predecessors | Other |
| --- | --- | --- | --- | --- | --- | --- | --- |
| 1 | **XÂY DỰNG HỆ THỐNG QUẢN LÝ KẾT NỐI VÀ CUNG CẤP GIA SƯ TP-HUẾ** |  | 2024-04-03 → 2024-04-01 (-2d) | 44d? → 42d? |  |  |  |
| 4 | **Phân Tích** | 2024-02-23 → 2024-02-21 (-2d) | 2024-03-14 → 2024-03-12 (-2d) |  |  |  |  |
| 5 | **Thu thập, Phân tích Nhu Cầu Khách Hàng** |  | 2024-02-26 → 2024-02-29 (+3d) | 2d → 5d |  |  |  |
| 6 | **Trao đổi, thu nhập yêu cầu khách hàng** |  | 2024-02-23 → 2024-02-26 (+3d) | 1d → 2d |  |  |  |
| 7 | Gặp mặt, trao đổi với khách hàng |  |  | 0.5d → 1d | -11.5d → 0d |  |  |
| 8 | Thu nhập, ghi chú các thông tin, nhu cầu của khách hàng | 2024-02-23 → 2024-02-26 (+3d) | 2024-02-23 → 2024-02-26 (+3d) | 0.5d → 1d | -11.5d → 0d |  |  |
| 9 | **Phân tích nhu cầu khách hàng** | 2024-02-26 → 2024-02-27 (+1d) | 2024-02-26 → 2024-02-29 (+3d) | 1d → 3d |  |  |  |
| 10 | Chọn lọc, phân loại các yêu cầu của khách hàng | 2024-02-26 → 2024-02-27 (+1d) | 2024-02-26 → 2024-02-27 (+1d) | 3h → 1d | -11.5d → 0d |  |  |
| 11 | Xác định các yêu cầu chức năng và phi chức năng | 2024-02-26 → 2024-02-28 (+2d) | 2024-02-26 → 2024-02-28 (+2d) | 2.5h → 1d | -11.5d → 0d |  |  |
| 12 | Tổng kết những thông tin đã thu nhập và phân tích | 2024-02-26 → 2024-02-29 (+3d) | 2024-02-26 → 2024-02-29 (+3d) | 1.5h → 1h | -11.5d → 8.88d |  |  |
| 13 | Xác định những yêu cầu đáp ứng được và không đáp ứng được | 2024-02-26 → 2024-02-29 (+3d) | 2024-02-26 → 2024-02-29 (+3d) | 1h → 1d | -11.5d → 0d | 12 → 11 |  |
| 14 | **Lên ý tưởng, Phân tích cấu trúc phần mềm, phi chức năng, thông số kỹ thuật, giao diện, xác định rủi ro, ước lượng công việc** | 2024-02-27 → 2024-02-21 (-6d) | 2024-03-11 → 2024-03-12 (+1d) | 10d → 15d |  |  |  |
| 15 | **Tổ chức và lên ý tưởng** | 2024-02-27 → 2024-03-01 (+3d) | 2024-02-27 → 2024-03-05 (+7d) | 1d → 3d |  |  |  |
| 16 | Tổ chức họp đội ngũ trong việc lên ý tưởng | 2024-02-27 → 2024-03-01 (+3d) | 2024-02-27 → 2024-03-04 (+6d) | 0.4d → 2d | -11.5d → 0d |  |  |
| 17 | Xây dựng mô phỏng dự án | 2024-02-27 → 2024-03-05 (+7d) | 2024-02-27 → 2024-03-05 (+7d) | 0.6d → 1d | -11.5d → 0d |  |  |
| 18 | **Phân tích cấu trúc phần mềm** | 2024-02-28 → 2024-03-06 (+7d) | 2024-02-29 → 2024-03-07 (+7d) |  |  |  |  |
| 19 | Xác định và mô tả các chức năng cần thiết của hệ thống | 2024-02-28 → 2024-03-06 (+7d) | 2024-02-28 → 2024-03-06 (+7d) |  | -11.5d → 0d |  |  |
| 20 | Tạo biểu đồ usecase và mô tả chi tiết các yêu cầu chức năng | 2024-02-29 → 2024-03-07 (+7d) | 2024-02-29 → 2024-03-07 (+7d) |  | -11.5d → 0d |  |  |
| 21 | **Phân tích phi chức năng** | 2024-03-01 → 2024-03-08 (+7d) | 2024-03-01 → 2024-03-08 (+7d) |  |  |  |  |
| 22 | Xác định các yêu cầu như tiêu chuẩn về hiệu suất, bảo mật và giao diện người dùng | 2024-03-01 → 2024-03-08 (+7d) | 2024-03-01 → 2024-03-08 (+7d) |  | -11.5d → 0d |  |  |
| 23 | **Phân tích thông số kỹ thuật** | 2024-03-04 → 2024-03-11 (+7d) | 2024-03-04 → 2024-03-12 (+8d) | 1d → 2d |  |  |  |
| 24 | Phân tích các thông số kỹ thuật về hiệu suất, dung lượng và độ tin cậy | 2024-03-04 → 2024-03-11 (+7d) | 2024-03-04 → 2024-03-12 (+8d) | 0.7d → 2d | -11.5d → 0d | Xác định các yêu cầu kỹ thuật của hệ thống → 22 | resources Đỗ Thị Diệu Ái - Phân Tích Viên 2; Hoàng Thanh Tùng - Phân Tích Viên 1 → Đỗ Thị Diệu Ái - Phân Tích Viên 2 |
| 25 | **Phân tích giao diện** | 2024-03-05 → 2024-02-21 (-13d) | 2024-03-05 → 2024-02-22 (-12d) | 1d → 2d | 0d → 4d |  |  |
| 26 | Lên ý tưởng về giao diện theo yêu cầu | 2024-03-05 → 2024-02-21 (-13d) | 2024-03-05 → 2024-02-22 (-12d) | 1d → 2d | -11.5d → 4d | 24 → none |  |
| 27 | **Xác định rủi ro** | 2024-03-06 → 2024-02-23 (-12d) | 2024-03-07 → 2024-02-27 (-9d) | 2d → 3d | 0d → 4d |  |  |
| 28 | Phân tích các rủi ro tiềm ẩn trong dự án và đề xuất các biện pháp phòng ngừa | 2024-03-06 → 2024-02-23 (-12d) | 2024-03-06 → 2024-02-26 (-9d) | 1d → 2d | -11.5d → 4d |  |  |
| 29 | Xác định các vấn đề có thể phát sinh và các giải pháp giảm thiểu tác động của chúng | 2024-03-07 → 2024-02-27 (-9d) | 2024-03-07 → 2024-02-27 (-9d) |  | -11.5d → 4d |  |  |
| 30 | **Lập kế hoạch và ước lượng công việc** | 2024-03-08 → 2024-02-28 (-9d) | 2024-03-11 → 2024-03-01 (-10d) | 2d → 3d | 0d → 4d |  |  |
| 31 | Phân tích công việc cần thực hiện và ước lượng thời gian và nguồn lực cần thiết | 2024-03-08 → 2024-02-28 (-9d) | 2024-03-08 → 2024-02-29 (-8d) | 1d → 2d | -11.5d → 4d |  |  |
| 32 | Lập bảng phân rã công việc | 2024-03-11 → 2024-03-01 (-10d) | 2024-03-11 → 2024-03-01 (-10d) |  | -11.5d → 4d |  |  |
| 33 | **Lập Bảng Báo Cáo, Phản Hồi Khách Hàng** | 2024-03-12 → 2024-03-04 (-8d) | 2024-03-13 → 2024-03-05 (-8d) |  | 0d → 4d |  |  |
| 34 | **Lập bảng báo cáo, Phản hồi khách hàng** | 2024-03-12 → 2024-03-04 (-8d) | 2024-03-13 → 2024-03-05 (-8d) |  | 0d → 4d |  |  |
| 35 | Tạo tài liệu báo cáo về quá trình, các kết quả đạt được và kế hoạch cho giai đoạn tiếp theo của dự án | 2024-03-12 → 2024-03-04 (-8d) | 2024-03-12 → 2024-03-04 (-8d) |  | -11.5d → 4d |  |  |
| 36 | Liên hệ với khách hàng để trao đổi và xác nhận rằng phần mềm đã được thiết kế đáp ứng mong muốn của khách hàng | 2024-03-13 → 2024-03-05 (-8d) | 2024-03-13 → 2024-03-05 (-8d) |  | -11.5d → 4d |  |  |
| 37 | Chờ phê duyệt để tiến hành | 2024-03-14 → 2024-03-06 (-8d) | 2024-03-14 → 2024-03-06 (-8d) |  | -11.5d → 4d |  |  |
| 38 | Hoàn thành phân tích | 2024-03-14 → 2024-03-06 (-8d) | 2024-03-14 → 2024-03-06 (-8d) |  | -11.5d → 4d |  |  |
| 39 | **Thiết Kế** | 2024-03-15 → 2024-03-13 (-2d) | 2024-04-03 → 2024-04-01 (-2d) |  |  |  |  |
| 40 | **Thiết Kế CSDL** | 2024-03-15 → 2024-03-13 (-2d) | 2024-03-26 → 2024-03-22 (-4d) |  |  |  |  |
| 41 | **Thu nhập yêu cầu về dữ liệu từ bản báo cáo phân tích** | 2024-03-15 → 2024-03-13 (-2d) | 2024-03-15 → 2024-03-13 (-2d) |  |  |  |  |
| 42 | Xác định thông tin cần lưu trữ, các mối quan hệ giữa các đối tượng | 2024-03-15 → 2024-03-13 (-2d) | 2024-03-15 → 2024-03-13 (-2d) |  |  |  |  |
| 43 | Xác định các yêu cầu về hiệu suất và bảo mật dữ liệu | 2024-03-15 → 2024-03-13 (-2d) | 2024-03-15 → 2024-03-13 (-2d) |  |  |  |  |
| 44 | **Thiết kế mô hình dữ liệu** | 2024-03-18 → 2024-03-14 (-4d) | 2024-03-18 → 2024-03-14 (-4d) |  |  |  |  |
| 45 | Xác định các bảng dữ liệu, các mối quan hệ giữa các bảng trên | 2024-03-18 → 2024-03-14 (-4d) | 2024-03-18 → 2024-03-14 (-4d) |  |  |  |  |
| 46 | Xác định các ràng buộc và các truy vấn cần thiết để truy cập dữ liệu | 2024-03-18 → 2024-03-14 (-4d) | 2024-03-18 → 2024-03-14 (-4d) |  |  |  |  |
| 47 | **Thiết kế lược đồ quan hệ** | 2024-03-19 → 2024-03-15 (-4d) | 2024-03-20 → 2024-03-18 (-2d) |  |  |  |  |
| 48 | Định nghĩa cấu trúc cho mỗi bảng, bao gồm các trường (hoặc cột), xác định khóa chính và kiểu dữ liệu của các bảng trên | 2024-03-19 → 2024-03-15 (-4d) | 2024-03-20 → 2024-03-18 (-2d) |  |  |  |  |
| 49 | Xác định các thực thể, các thuộc tính, các quan hệ, các ràng buộc và các truy vấn cần thiết để truy cập dữ liệu | 2024-03-19 → 2024-03-15 (-4d) | 2024-03-20 → 2024-03-18 (-2d) |  |  |  |  |
| 50 | **Xây dựng lược đồ quan hệ** | 2024-03-21 → 2024-03-19 (-2d) | 2024-03-26 → 2024-03-22 (-4d) |  |  |  |  |
| 51 | Mô hình hóa cấu trúc dữ liệu đã thiết kế bằng cách sử dụng công cụ sơ đồ thực thể - quan hệ (ERD) | 2024-03-21 → 2024-03-19 (-2d) | 2024-03-21 → 2024-03-19 (-2d) |  |  |  |  |
| 52 | Vẽ biểu đồ biểu diễn lược đồ quan hệ | 2024-03-22 → 2024-03-20 (-2d) | 2024-03-22 → 2024-03-20 (-2d) |  |  |  |  |
| 53 | Chuẩn hóa cơ sở dữ liệu | 2024-03-25 → 2024-03-21 (-4d) | 2024-03-26 → 2024-03-22 (-4d) |  |  |  |  |
| 54 | **Thiết kế cấu trúc phần mềm** | 2024-03-27 → 2024-03-25 (-2d) | 2024-04-02 → 2024-03-29 (-4d) |  |  |  |  |
| 55 | Mô tả các module của hệ thống | 2024-03-27 → 2024-03-25 (-2d) | 2024-04-02 → 2024-03-29 (-4d) |  |  |  |  |
| 56 | Thiết kế biểu đồ tuần tự | 2024-03-27 → 2024-03-25 (-2d) | 2024-04-02 → 2024-03-29 (-4d) |  |  |  |  |
| 57 | Thiết kế biểu đồ hoạt động | 2024-03-27 → 2024-03-25 (-2d) | 2024-04-02 → 2024-03-29 (-4d) |  |  |  |  |
| 58 | Thiết kế biểu đồ thành phần | 2024-03-27 → 2024-03-25 (-2d) | 2024-04-02 → 2024-03-29 (-4d) |  |  |  |  |
| 59 | **Thiết kế giao diện** | 2024-03-15 → 2024-03-13 (-2d) | 2024-03-20 → 2024-03-18 (-2d) |  |  |  |  |
| 60 | **Thu thập, phân tích yêu cầu từ bản báo cáo phân tích** | 2024-03-15 → 2024-03-13 (-2d) | 2024-03-15 → 2024-03-13 (-2d) |  |  |  |  |
| 61 | Xác định nhóm đích của ứng dụng, nhu cầu của người dùng | 2024-03-15 → 2024-03-13 (-2d) | 2024-03-15 → 2024-03-13 (-2d) |  | 18d → 10d |  |  |
| 62 | Xác định các tính năng cần thiết của ứng dụng | 2024-03-15 → 2024-03-13 (-2d) | 2024-03-15 → 2024-03-13 (-2d) |  | 18d → 10d |  |  |
| 63 | **Lên ý tưởng thiết kế giao diện người dùng** | 2024-03-18 → 2024-03-14 (-4d) | 2024-03-20 → 2024-03-18 (-2d) |  |  |  |  |
| 64 | Xác định các thao tác, chức năng của từng đối tượng | 2024-03-18 → 2024-03-14 (-4d) | 2024-03-18 → 2024-03-14 (-4d) |  | 18d → 10d |  |  |
| 65 | Xác định cấu trúc và vị trí của các phần tử giao diện | 2024-03-18 → 2024-03-14 (-4d) | 2024-03-18 → 2024-03-14 (-4d) |  | 18d → 10d |  |  |
| 66 | Vẽ các bản thiết kế sơ bộ của giao diện người dùng | 2024-03-19 → 2024-03-15 (-4d) | 2024-03-19 → 2024-03-15 (-4d) |  | 18d → 10d |  |  |
| 67 | Thiết kế mockup màn hình giao diện người dùng | 2024-03-20 → 2024-03-18 (-2d) | 2024-03-20 → 2024-03-18 (-2d) |  | 18d → 10d |  |  |
| 68 | **Thiết kế thành phần hệ thống** | 2024-03-27 → 2024-03-25 (-2d) | 2024-03-28 → 2024-03-26 (-2d) |  |  |  |  |
| 69 | Thiết kế thành phần bảo mật | 2024-03-27 → 2024-03-25 (-2d) | 2024-03-28 → 2024-03-26 (-2d) |  |  |  |  |
| 70 | Xác định các thành phần như máy chủ, mạng, các dịch vụ hỗ trợ | 2024-03-27 → 2024-03-25 (-2d) | 2024-03-28 → 2024-03-26 (-2d) |  |  |  |  |
| 71 | Chờ Phê Duyệt Để Tiến Hành | 2024-04-03 → 2024-04-01 (-2d) | 2024-04-03 → 2024-04-01 (-2d) |  |  |  |  |
| 72 | Hoàn Thành Thiết Kế | 2024-04-03 → 2024-04-01 (-2d) | 2024-04-03 → 2024-04-01 (-2d) |  |  |  |  |

## Version 3 (saved 2024-04-20)

Note of the change: Merge branch 'main' of https://github.com/huy1133/KD

Last finish 2024-04-01 → 2024-05-07 (+36d).

Added:

| ID | Task | Duration | Start | Finish | Predecessors |
| --- | --- | --- | --- | --- | --- |
| 94 | Hoàn thành lập trình | 0d | 2024-05-07 | 2024-05-07 | 93 |

Changed:

| ID | Task | Start | Finish | Duration | Total float | Predecessors |
| --- | --- | --- | --- | --- | --- | --- |
| 1 | **XÂY DỰNG HỆ THỐNG QUẢN LÝ KẾT NỐI VÀ CUNG CẤP GIA SƯ TP-HUẾ** |  | 2024-04-01 → 2024-05-07 (+36d) | 42d? → 65d? |  |  |
| 73 | **Triển Khai** | 2024-02-21 → 2024-04-02 (+41d) | 2024-03-08 → 2024-05-07 (+60d) | 13d → 23d |  |  |
| 74 | **Lập trình chức năng** | 2024-02-21 → 2024-04-02 (+41d) | 2024-02-28 → 2024-04-11 (+43d) | 6d → 8d |  |  |
| 75 | Phân tích logic hoạt động các tính năng và chức năng | 2024-02-21 → 2024-04-02 (+41d) | 2024-02-22 → 2024-04-03 (+41d) |  | none → 0d | none → 72 |
| 76 | Lập trình lớp, đối tượng và hàm xử lý chức năng | 2024-02-21 → 2024-04-02 (+41d) | 2024-02-21 → 2024-04-02 (+41d) |  | none → 1d | none → 72 |
| 77 | Lập trình module thực hiện chức năng cụ thể | 2024-02-21 → 2024-04-04 (+43d) | 2024-02-27 → 2024-04-10 (+43d) |  | none → 0d | none → 76, 75 |
| 78 | Liên kết các module thành hệ thống tông thể | 2024-02-28 → 2024-04-11 (+43d) | 2024-02-28 → 2024-04-11 (+43d) |  | none → 0d |  |
| 79 | **Tương tác cơ sở dữ liệu** | 2024-02-21 → 2024-04-02 (+41d) | 2024-02-29 → 2024-04-15 (+46d) | 7d → 10d |  |  |
| 80 | Tạo cơ sở dữ liệu, bảng thuộc tính, ràng buộc trên sql | 2024-02-21 → 2024-04-02 (+41d) | 2024-02-22 → 2024-04-03 (+41d) |  | none → 2d | none → 72 |
| 81 | Viết mã truy vấn, hàm, thủ tục sql | 2024-02-23 → 2024-04-04 (+41d) | 2024-02-26 → 2024-04-05 (+39d) |  | none → 2d |  |
| 82 | Xử lý kết quả trả về từ CSDL | 2024-02-27 → 2024-04-08 (+41d) | 2024-02-27 → 2024-04-08 (+41d) |  | none → 2d |  |
| 83 | Lập trình tích hợp cơ sở dữ liệu vào các hàm chức năng của hệ thống | 2024-02-28 → 2024-04-12 (+44d) | 2024-02-29 → 2024-04-15 (+46d) |  | none → 0d | 82 → 82, 78 |
| 84 | **Triển khai giao diện người dùng** | 2024-02-21 → 2024-04-16 (+55d) | 2024-02-27 → 2024-04-23 (+56d) |  |  |  |
| 85 | Phát triển giao diện (UI), hiển thị thông tin và tương tác người dùng | 2024-02-21 → 2024-04-16 (+55d) | 2024-02-22 → 2024-04-17 (+55d) |  | none → 0d | none → 83 |
| 86 | Lập trình các sự kiện hành vi của các UI tác động trực tiếp vào hệ thống | 2024-02-23 → 2024-04-19 (+56d) | 2024-02-27 → 2024-04-23 (+56d) |  | none → 0d |  |
| 87 | **Tối ưu hoá mã nguồn** | 2024-02-28 → 2024-04-24 (+56d) | 2024-03-06 → 2024-05-03 (+58d) |  |  |  |
| 88 | Kiểm tra, đánh giá và tối ưu mã nguồn | 2024-02-28 → 2024-04-24 (+56d) | 2024-03-01 → 2024-04-26 (+56d) |  | none → 0d |  |
| 89 | Kiểm tra tính đúng khi các chức năng hoạt động | 2024-02-28 → 2024-04-24 (+56d) | 2024-03-01 → 2024-04-26 (+56d) |  | none → 0d |  |
| 90 | Kiểm thử và sửa lỗi | 2024-03-04 → 2024-04-29 (+56d) | 2024-03-06 → 2024-05-03 (+58d) |  | none → 0d |  |
| 91 | **Tạo tài liệu hoá logic** | 2024-03-07 → 2024-05-06 (+60d) | 2024-03-08 → 2024-05-07 (+60d) |  |  |  |
| 92 | Tạo tài tiệu mô tả chú thích, giải thích cách mã nguồn hoạt động | 2024-03-07 → 2024-05-06 (+60d) | 2024-03-08 → 2024-05-07 (+60d) |  | none → 0d | 87 → 90 |
| 93 | Tạo tài liệu kĩ thuật hướng dẫn sử dụng phần mềm | 2024-03-07 → 2024-05-06 (+60d) | 2024-03-08 → 2024-05-07 (+60d) |  | none → 0d | 87 → 90 |
| 95 | **Kiểm thử** |  | 2024-04-01 → 2024-03-22 (-10d) | 41.5d → 36d | 0d → 29d |  |
| 102 | **Lập kế hoạch kiểm thử** | 2024-02-27 → 2024-02-21 (-6d) | 2024-03-01 → 2024-02-23 (-7d) | 3.5d → 3d | 0d → 29d |  |
| 103 | Xác định phạm vi dự án | 2024-02-27 → 2024-02-21 (-6d) | 2024-02-27 → 2024-02-21 (-6d) |  | none → 29d |  |
| 104 | Xác định phương án tiếp cận | 2024-02-27 → 2024-02-21 (-6d) | 2024-02-28 → 2024-02-21 (-7d) |  | none → 29d |  |
| 105 | Xác định nguồn lực | 2024-02-27 → 2024-02-21 (-6d) | 2024-02-28 → 2024-02-21 (-7d) |  | none → 29d |  |
| 106 | Lên kế hoạch thiết kế công việc kiểm thử | 2024-02-28 → 2024-02-22 (-6d) | 2024-03-01 → 2024-02-23 (-7d) |  | none → 29d |  |
| 107 | **Thiết kế kịch bản kiểm thử** | 2024-03-04 → 2024-02-26 (-7d) | 2024-03-18 → 2024-03-08 (-10d) |  | 0d → 29d |  |
| 108 | Review tài liệu | 2024-03-04 → 2024-02-26 (-7d) | 2024-03-06 → 2024-02-27 (-8d) |  | none → 29d |  |
| 109 | Viết testcase/checklist | 2024-03-06 → 2024-02-28 (-7d) | 2024-03-11 → 2024-03-01 (-10d) |  | none → 29d |  |
| 110 | Chuẩn bị dữ liệu kiểm thử | 2024-03-11 → 2024-03-04 (-7d) | 2024-03-13 → 2024-03-05 (-8d) |  | none → 29d |  |
| 111 | Review testcase/checklist | 2024-03-13 → 2024-03-06 (-7d) | 2024-03-18 → 2024-03-08 (-10d) |  | 0.5d → 29d |  |
| 112 | **Thiết lập môi trường kiểm thử** | 2024-03-18 → 2024-03-11 (-7d) | 2024-03-20 → 2024-03-12 (-8d) |  | 0d → 29d |  |
| 113 | Thiết lập môi trường kiểm thử(sever/client/network) | 2024-03-18 → 2024-03-11 (-7d) | 2024-03-20 → 2024-03-12 (-8d) |  | none → 37d |  |
| 114 | Chuẩn bị testcase để kiểm tra xem môi trường cài đặt | 2024-03-18 → 2024-03-11 (-7d) | 2024-03-19 → 2024-03-11 (-8d) |  | none → 29d |  |
| 115 | **Thực hiện kiểm thử** | 2024-03-19 → 2024-03-12 (-7d) | 2024-04-01 → 2024-03-22 (-10d) |  | 0d → 29d |  |
| 116 | Thực hiện các testcase như thiết kế | 2024-03-19 → 2024-03-12 (-7d) | 2024-03-22 → 2024-03-14 (-8d) |  | none → 29d |  |
| 117 | So sánh kết quả/theo dõi tình trạng lỗi | 2024-03-19 → 2024-03-12 (-7d) | 2024-03-22 → 2024-03-14 (-8d) |  | 0.5d → 29d |  |
| 118 | Thử hiện kiểm thử lại để xác định các lỗ hổng đã được sửa chữa | 2024-03-22 → 2024-03-15 (-7d) | 2024-03-27 → 2024-03-19 (-8d) |  | 0.5d → 29d |  |
| 119 | Đưa ra giải pháp | 2024-03-27 → 2024-03-20 (-7d) | 2024-03-29 → 2024-03-21 (-8d) |  | 0.5d → 29d |  |
| 120 | Đo và phân tích tiến độ | 2024-03-29 → 2024-03-22 (-7d) | 2024-04-01 → 2024-03-22 (-10d) |  | none → 29d |  |
| 121 | Báo cáo tình hình thực hiện dự án | 2024-03-29 → 2024-03-22 (-7d) | 2024-04-01 → 2024-03-22 (-10d) |  | 0.5d → 29d |  |
| 122 | **Đóng chu trình kiểm thử** |  | 2024-02-02 → 2024-02-21 (+19d) | 1d → 14d | 0d → 51d |  |
| 124 | Đánh giá tiêu chí hoàn thành | 2024-02-02 → 2024-02-21 (+19d) | 2024-02-02 → 2024-02-21 (+19d) |  | none → 51d |  |
