# temp

How a schedule from MS Project changed from version to version. A marks actual dates.

## Version 1 (saved 2024-03-11)

Note of the change: Merge branch 'main' of https://github.com/huy1133/KD

| ID | WBS | Task | Duration | Start | Finish | Predecessors | Complete | Total float | Constraint |
| --- | --- | --- | --- | --- | --- | --- | --- | --- | --- |
| 1 | 1 | **XÂY DỰNG HỆ THỐNG QUẢN LÝ KẾT NỐI VÀ CUNG CẤP GIA SƯ TP-HUẾ** | 45d | 2024-02-21 A | 2024-04-24 |  | 5% | 0d |  |
| 2 |  | Bản kế hoạch dự án | 1d | 2024-02-21 A | 2024-02-21 A |  | 100% |  | finish no earlier than 2024-02-21 |
| 3 |  | Thời gian phê duyệt dự án | 1d | 2024-02-22 A | 2024-02-22 A | 2 | 100% |  | start no earlier than 2024-02-22 |
| 4 | 1.3 | **Phân Tích** | 9d | 2024-02-21 | 2024-03-05 |  |  | 9d |  |
| 5 |  | Thu Thập, Phân Tích Nhu Cầu Khách Hàng | 2d | 2024-02-21 | 2024-02-22 |  |  | 5d |  |
| 6 |  | Lên Ý Tưởng, Phân Tích Thông Số Kĩ Thuật | 4d | 2024-02-23 | 2024-02-28 | 5 |  | 5d |  |
| 7 |  | Lập Bảng Báo Cáo, Phản Hồi Khách Hàng | 2d | 2024-02-29 | 2024-03-01 | 6 |  | 5d |  |
| 8 |  | Chờ Phê Duyệt Để Tiến Hành | 1d | 2024-03-04 | 2024-03-04 | 7 |  | 5d |  |
| 9 |  | Hoàn Thành Phân Tích | 0d | 2024-03-05 | 2024-03-05 | 8 |  |  |  |
| 10 | 1.4 | **Thiết kế** | 8d | 2024-03-05 | 2024-03-15 |  |  | 8d |  |
| 11 |  | Thiết Kế Cấu Trúc Phần Mềm | 2d | 2024-03-05 | 2024-03-06 | 9 |  | 5d |  |
| 12 |  | Thiết Kế Giao Diện | 2d | 2024-03-07 | 2024-03-08 | 11 |  | 5d |  |
| 13 |  | Thiết Kế Cơ Sở Dữ Liệu | 2d | 2024-03-11 | 2024-03-12 | 12 |  | 5d |  |
| 14 |  | Thiết Kế Thành Phần Hệ Thống | 1d | 2024-03-13 | 2024-03-13 | 13 |  | 5d |  |
| 15 |  | Chờ Phê Duyệt Để Tiến Hành | 1d | 2024-03-14 | 2024-03-14 | 14 |  | 5d |  |
| 16 |  | Hoàn Thành Thiết kế | 0d | 2024-03-15 | 2024-03-15 | 15 |  |  |  |
| 17 | 1.5 | **Triển Khai** | 37d | 2024-02-21 | 2024-04-12 |  |  | 8d |  |
| 18 | 1.5.1 | **Triển Khai Logic Hệ Thông** | 0d | 2024-03-15 | 2024-03-15 | 16 |  | 10d |  |
| 19 | 1.5.1.1 | **Phân tích thuật toán cho từng chức năng hệ thống** | 0d | 2024-03-15 | 2024-03-15 |  |  | 10d |  |
| 20 |  | Phân tích và hiểu rõ các yêu câu của từng chức năng | 1d? | 2024-03-15 | 2024-03-15 |  |  |  |  |
| 21 |  | Xác định thuật toán và quy trình logic xử lý cho mỗi chức năng | 1d? | 2024-03-15 | 2024-03-15 |  |  |  |  |
| 22 | 1.5.2 | **Xác định ngôn ngữ lập trình, công cụ phát triển và triển khai thuật toán** | 0d | 2024-02-21 | 2024-02-21 |  |  | 45d |  |
| 23 |  | Chọn ngôn ngữ lập trình, công cụ phát triển và thư viện | 1d? | 2024-03-15 | 2024-03-15 |  |  |  |  |
| 24 |  | Triển khai xây dựng thuật toán cho các chức năng | 1d? | 2024-02-21 | 2024-02-21 |  |  |  |  |
| 25 |  | Kiểm tra tính logic xử lý của từng chức năng | 1d? | 2024-02-21 | 2024-02-21 |  |  |  |  |
| 26 | 1.5.3 | **Liên kết các chức năng, logic hóa hệ thống** | 0d | 2024-02-21 | 2024-02-21 |  |  | 45d |  |
| 27 |  | Kết nối các chức năng, đảm bảo tính logic hệ thống | 1d? | 2024-02-21 | 2024-02-21 |  |  |  |  |
| 28 |  | Kiểm tra tính logic, hoạt động của hệ thống và đảm bảo không có sự xung đột giữa các chức năng | 1d? | 2024-02-21 | 2024-02-21 |  |  |  |  |
| 29 | 1.5.4 | **Kiểm tra và xác định tính đúng đắn của thuật toán và quy trình logic của hệ thống** | 0d | 2024-02-21 | 2024-02-21 |  |  | 45d |  |
| 30 |  | Thực hiện các bước kiểm tra thuật toán và quy trình logic hệ thống | 1d? | 2024-02-21 | 2024-02-21 |  |  |  |  |
| 31 |  | Gỡ lỗi và sửa các lỗi phát sinh trong quá trình triển khai thuật toán | 1d? | 2024-02-21 | 2024-02-21 |  |  |  |  |
| 32 | 1.5.5 | **Viết báo cáo thuật toán, logic hệ thống** | 0d | 2024-02-21 | 2024-02-21 |  |  | 45d |  |
| 33 |  | Lập báo cáo chi tiết về các thuật toán được dùng trong mỗi chức năng | 1d? | 2024-02-21 | 2024-02-21 |  |  |  |  |
| 34 |  | Lập báo cáo cụ thể logic hoạt động của mỗi chức năng và nguyên lý hoạt động của các chức năng đó | 1d? | 2024-02-21 | 2024-02-21 |  |  |  |  |
| 35 | 1.5.6 | **Phát Triển Các Thành Phần CSDL** | 0d | 2024-03-15 | 2024-03-15 | 18 |  | 10d |  |
| 36 | 1.5.6.1 | **Thiết kế bảng, thành phần dữ liệu** | 0d | 2024-03-15 | 2024-03-15 |  |  | 10d |  |
| 37 |  | Cài đặt và sử dụng SQL Sever để thiết kế cơ sở dữ liệu | 1d? | 2024-03-15 | 2024-03-15 |  |  |  |  |
| 38 |  | Xây dựng cấu trúc các bảng dữ liệu cần thiết dựa trên mô hình dữ liệu đã thiết kế | 1d? | 2024-03-15 | 2024-03-15 |  |  |  |  |
| 39 |  | Xây dựng các liên kết, ràng buộc giữa các bảng, đảm bảo tính nhất quán dữ liệu | 1d? | 2024-03-15 | 2024-03-15 |  |  |  |  |
| 40 | 1.5.6.2 | **Thiết kế chức năng** | 0d | 2024-03-15 | 2024-03-15 |  |  | 10d |  |
| 41 |  | Lập trình các hàm chức năng truy xuất dữ liệu bao gồm thêm, sửa, xóa và truy vấn(function)) | 1d? | 2024-03-15 | 2024-03-15 |  |  |  |  |
| 42 |  | Lập trình các quy trình xử lý dữ liệu(procedure) | 1d? | 2024-03-15 | 2024-03-15 |  |  |  |  |
| 43 |  | Lập trình các bẩy sự kiện(trigger) | 1d? | 2024-03-15 | 2024-03-15 |  |  |  |  |
| 44 |  | Lập trình các giao tác đảm bảo tính nhất quán dữ liệu(transaction) | 1d? | 2024-03-15 | 2024-03-15 |  |  |  |  |
| 45 |  | Lập Trình Hệ Thống | 5d | 2024-03-15 | 2024-03-21 | 35 |  | 10d |  |
| 46 |  | Đánh Giá Và Tối Ưu Mã Nguồn | 5d | 2024-03-22 | 2024-03-28 | 45 |  | 10d |  |
| 47 |  | Hoàn Thành Lập Trình | 0d | 2024-04-12 | 2024-04-12 | 46 |  |  |  |
| 48 | 1.6 | **Kiểm Thử** | 6d | 2024-04-12 | 2024-04-23 |  |  | 0d |  |
| 49 |  | Lập Bảng Kế Hoạch Kiểm Thử | 1d | 2024-04-12 | 2024-04-12 | 47 |  | 0d |  |
| 50 |  | Viết Và Tiến Hành Các Ca Kiểm Thử | 1d | 2024-04-15 | 2024-04-15 | 49 |  | 0d |  |
| 51 |  | Kiểm Thử Toàn Hệ Thống | 1d | 2024-04-16 | 2024-04-16 | 50 |  | 0d |  |
| 52 |  | Xác Định Và Sữa Lỗi | 2d | 2024-04-17 | 2024-04-19 | 51 |  | 0d |  |
| 53 |  | Đánh Giá Cuối Cùng | 1d | 2024-04-22 | 2024-04-22 | 52 |  | 0d |  |
| 54 |  | Hoàn Thành Kiểm Thử | 0d | 2024-04-23 | 2024-04-23 | 53 |  |  |  |
| 55 | 1.7 | **Bàn Giao** | 2d | 2024-04-23 | 2024-04-24 |  |  | 0d |  |
| 56 |  | Cài Đặt Phần Mềm | 1d | 2024-04-23 | 2024-04-23 | 54 |  | 0d |  |
| 57 |  | Hướng Dẫn Phầm Mềm | 1d | 2024-04-24 | 2024-04-24 | 56 |  | 0d |  |

## Version 2 (saved 2024-03-11)

Note of the change: Merge branch 'main' of https://github.com/huy1133/KD

Last finish stays 2024-04-24.

Added:

| ID | Task | Duration | Start | Finish |
| --- | --- | --- | --- | --- |
| 45 | **Tối ưu hóa và đảm bảo hiệu suất** | 0d | 2024-03-15 | 2024-03-15 |
| 46 | Tối ưu hóa lại cấu trúc cơ sở dữ liệu để đảm bảo hiệu suất và khả năng mở rộng của hệ thống | 1d? | 2024-03-15 | 2024-03-15 |
| 47 | Kiểm tra lại và đánh giá hiệu suất của các truy vấn và thao tác dữ liệu | 1d? | 2024-03-15 | 2024-03-15 |
| 48 | **Viết báo cáo** | 0d | 2024-02-21 | 2024-02-21 |
| 49 | Lập báo cáo chi tiết các thành phần trong CSDL(Các bảng, thuộc tính, kiểu dữ liệu,...) | 1d? | 2024-02-21 | 2024-02-21 |
| 50 | Viết hướng dẫn chi tiết sử dụng các hàm chức năng, quy trình, bẩy sự kiện và giao tác của CSDL | 1d? | 2024-02-21 | 2024-02-21 |
| 51 | Đánh giá chi tiết hiệu suất hoạt động của các hàm chức năng, quy trình, bẩy sự kiện và giao tác | 1d? | 2024-02-21 | 2024-02-21 |
| 53 | **Xây dựng giao diện người dùng(UI)** | 0d | 2024-03-15 | 2024-03-15 |
| 54 | Xây dựng giao diện người dùng dựa trên thiết kế giao diện đã được xác định trước đó | 1d? | 2024-03-15 | 2024-03-15 |
| 55 | Sử dụng framework UI để phát triển giao diện người dùng tương tác | 1d? | 2024-03-15 | 2024-03-15 |
| 56 | **Tích hợp các thành phần** | 0d | 2024-03-15 | 2024-03-15 |
| 57 | Tích hợp CSDL vào các chức năng logic hệ thống | 1d? | 2024-03-15 | 2024-03-15 |
| 58 | Tích hợp giao diện vào các chức năng cụ thể để tạo ra ứng dụng hoàn chỉnh | 1d? | 2024-03-15 | 2024-03-15 |
| 59 | **Kiểm tra và gỡ lỗi** | 0d | 2024-03-15 | 2024-03-15 |
| 60 | Kiểm tra đảm bảo các chức năng và giao diện người dùng hoạt động đúng đắn và không gặp lỗi | 1d? | 2024-03-15 | 2024-03-15 |
| 61 | Sửa các lỗi phát sinh trong quá trình lập trình | 1d? | 2024-03-15 | 2024-03-15 |
| 63 | **Kiểm tra mã nguồn** | 0d | 2024-03-15 | 2024-03-15 |
| 64 | Kiêm tra mã nguồn để phát hiện các lỗi cú pháp, cảnh báo tiềm ẩn và các vấn đề bảo mật | 1d? | 2024-03-15 | 2024-03-15 |
| 65 | Kiểm tra tính nhất quán và tuân thủ các quy tắc lập trình | 1d? | 2024-03-15 | 2024-03-15 |
| 66 | **Phân tích hiệu suất** | 0d | 2024-03-15 | 2024-03-15 |
| 67 | Đánh giá hiệu suất của mã nguồn bao gồm thời gian phản hồi, tải trọng, sử dụng tài nguyên | 1d? | 2024-03-15 | 2024-03-15 |
| 68 | Xác định các vấn đề liên quan đến hiệu suất và điều chỉnh mã nguồn để cải thiện hiệu suất | 1d? | 2024-03-15 | 2024-03-15 |
| 69 | **Tối ưu hóa mã nguồn** | 0d | 2024-03-15 | 2024-03-15 |
| 70 | Loại bỏ các mã không cần thiết hoặc mã lập lại | 1d? | 2024-03-15 | 2024-03-15 |
| 71 | Sử dụng các cấu trúc dữ liệu và thuật toán hiệu quả để tối ưu hóa thời gian thực thi và tài nguyên sử dụng | 1d? | 2024-03-15 | 2024-03-15 |
| 72 | **Kiểm tra tính bảo mật** | 0d | 2024-03-15 | 2024-03-15 |
| 73 | Đánh giá và kiểm tra tính bảo mật của mã nguồn | 1d? | 2024-03-15 | 2024-03-15 |
| 74 | Mã hóa dữ liệu, kiểm tra nhập liệu và xác thực người dùng | 1d? | 2024-03-15 | 2024-03-15 |
| 75 | **Viết báo cáo đánh giá hiệu suất hoạt động, tính bảo mật hệ thống và khả năng mở rộng mã nguồn** | 0d | 2024-03-15 | 2024-03-15 |
| 76 | Lập báo cáo đánh giá mã nguồn | 1d? | 2024-03-15 | 2024-03-15 |
| 77 | Lập báo cáo đánh giá hiệu suất phần mềm | 1d? | 2024-03-15 | 2024-03-15 |
| 78 | Lập báo cáo đánh giá mức độ an toàn hệ thống | 1d? | 2024-03-15 | 2024-03-15 |
| 79 | **Viết bảng hướng dẫn sử dụng phần mềm** | 0d | 2024-03-15 | 2024-03-15 |
| 80 | Trình bày cách sử dụng từng tính năng | 1d? | 2024-03-15 | 2024-03-15 |
| 81 | Tổng hợp các lưu ý khi sử dụng hệ thống | 1d? | 2024-03-15 | 2024-03-15 |
| 83 | <New Task> | 1d? | 2024-02-21 | 2024-02-21 |

Changed:

| ID | Task | Start | Finish | Duration | Complete | Total float |
| --- | --- | --- | --- | --- | --- | --- |
| 1 | **XÂY DỰNG HỆ THỐNG QUẢN LÝ KẾT NỐI VÀ CUNG CẤP GIA SƯ TP-HUẾ** |  |  |  | 5% → 7% |  |
| 52 | **Lập Trình Hệ Thống** |  | 2024-03-21 → 2024-03-15 (-6d) | 5d → 0d |  | 10d → 20d |
| 62 | **Đánh Giá Và Tối Ưu Mã Nguồn** | 2024-03-22 → 2024-03-15 (-7d) | 2024-03-28 → 2024-03-15 (-13d) | 5d → 0d |  | 10d → 20d |

## Version 3 (saved 2024-03-11)

Note of the change: Merge branch 'main' of https://github.com/huy1133/KD

Last finish 2024-04-24 → 2024-04-02 (-22d).

Removed: 83 <New Task>

Changed:

| ID | Task | Start | Finish | Duration | Complete | Total float | Predecessors | Other |
| --- | --- | --- | --- | --- | --- | --- | --- | --- |
| 1 | **XÂY DỰNG HỆ THỐNG QUẢN LÝ KẾT NỐI VÀ CUNG CẤP GIA SƯ TP-HUẾ** |  | 2024-04-24 → 2024-04-02 (-22d) | 45d → 30d? | 7% → 3% |  |  |  |
| 4 | **Phân Tích** |  | 2024-03-05 → 2024-03-04 (-1d) |  |  | 9d → 0d |  |  |
| 9 | Hoàn Thành Phân Tích | 2024-03-05 → 2024-03-04 (-1d) | 2024-03-05 → 2024-03-04 (-1d) |  |  | none → 0d |  |  |
| 10 | **Thiết kế** |  | 2024-03-15 → 2024-03-14 (-1d) |  |  | 8d → 0d |  |  |
| 16 | Hoàn Thành Thiết kế | 2024-03-15 → 2024-03-14 (-1d) | 2024-03-15 → 2024-03-14 (-1d) |  |  | none → 0d |  |  |
| 17 | **Triển Khai** |  | 2024-04-12 → 2024-03-21 (-22d) | 37d → 22d? |  |  |  |  |
| 18 | **Triển Khai Logic Hệ Thông** |  | 2024-03-15 → 2024-03-18 (+3d) | 0d → 2d |  | 20d → 0d |  |  |
| 19 | **Phân tích thuật toán cho từng chức năng hệ thống** |  | 2024-03-15 → 2024-03-18 (+3d) | 0d → 2d |  | 20d → 0d |  |  |
| 20 | Phân tích và hiểu rõ các yêu câu của từng chức năng |  |  | 1d? → 0.5d |  | none → 0d | none → 16 |  |
| 21 | Xác định thuật toán và quy trình logic xử lý cho mỗi chức năng |  | 2024-03-15 → 2024-03-18 (+3d) | 1d? → 1.5d |  | none → 0d | none → 20 |  |
| 22 | **Xác định ngôn ngữ lập trình, công cụ phát triển và triển khai thuật toán** | 2024-02-21 → 2024-03-18 (+26d) | 2024-02-21 → 2024-03-19 (+27d) | 0d → 2d |  | 45d → 10d |  |  |
| 23 | Chọn ngôn ngữ lập trình, công cụ phát triển và thư viện | 2024-03-15 → 2024-03-18 (+3d) | 2024-03-15 → 2024-03-18 (+3d) | 1d? → 2h |  | none → 10d | none → 21SS | constraint none → start no earlier than 2024-03-18 |
| 24 | Triển khai xây dựng thuật toán cho các chức năng | 2024-02-21 → 2024-03-18 (+26d) | 2024-02-21 → 2024-03-18 (+26d) | 1d? → 1d |  | none → 10d | none → 23SS | constraint none → start no earlier than 2024-02-19 |
| 25 | Kiểm tra tính logic xử lý của từng chức năng | 2024-02-21 → 2024-03-19 (+27d) | 2024-02-21 → 2024-03-19 (+27d) | 1d? → 1d |  | none → 10d | none → 24 |  |
| 26 | **Liên kết các chức năng, logic hóa hệ thống** |  |  | 0d → 1d? |  | 45d → 29d |  |  |
| 29 | **Kiểm tra và xác định tính đúng đắn của thuật toán và quy trình logic của hệ thống** |  |  | 0d → 1d? |  | 45d → 29d |  |  |
| 32 | **Viết báo cáo thuật toán, logic hệ thống** |  |  | 0d → 1d? |  | 45d → 29d |  |  |
| 35 | **Phát Triển Các Thành Phần CSDL** | 2024-03-15 → 2024-03-19 (+4d) | 2024-03-15 → 2024-03-19 (+4d) | 0d → 1d? |  | 20d → 0d |  |  |
| 36 | **Thiết kế bảng, thành phần dữ liệu** | 2024-03-15 → 2024-03-19 (+4d) | 2024-03-15 → 2024-03-19 (+4d) | 0d → 1d? |  | 20d → 0d |  |  |
| 37 | Cài đặt và sử dụng SQL Sever để thiết kế cơ sở dữ liệu | 2024-03-15 → 2024-03-19 (+4d) | 2024-03-15 → 2024-03-19 (+4d) |  |  | none → 0d |  |  |
| 38 | Xây dựng cấu trúc các bảng dữ liệu cần thiết dựa trên mô hình dữ liệu đã thiết kế | 2024-03-15 → 2024-03-19 (+4d) | 2024-03-15 → 2024-03-19 (+4d) |  |  | none → 0d |  |  |
| 39 | Xây dựng các liên kết, ràng buộc giữa các bảng, đảm bảo tính nhất quán dữ liệu | 2024-03-15 → 2024-03-19 (+4d) | 2024-03-15 → 2024-03-19 (+4d) |  |  | none → 0d |  |  |
| 40 | **Thiết kế chức năng** | 2024-03-15 → 2024-03-19 (+4d) | 2024-03-15 → 2024-03-19 (+4d) | 0d → 1d? |  | 20d → 0d |  |  |
| 41 | Lập trình các hàm chức năng truy xuất dữ liệu bao gồm thêm, sửa, xóa và truy vấn(function)) | 2024-03-15 → 2024-03-19 (+4d) | 2024-03-15 → 2024-03-19 (+4d) |  |  | none → 0d |  |  |
| 42 | Lập trình các quy trình xử lý dữ liệu(procedure) | 2024-03-15 → 2024-03-19 (+4d) | 2024-03-15 → 2024-03-19 (+4d) |  |  | none → 0d |  |  |
| 43 | Lập trình các bẩy sự kiện(trigger) | 2024-03-15 → 2024-03-19 (+4d) | 2024-03-15 → 2024-03-19 (+4d) |  |  | none → 0d |  |  |
| 44 | Lập trình các giao tác đảm bảo tính nhất quán dữ liệu(transaction) | 2024-03-15 → 2024-03-19 (+4d) | 2024-03-15 → 2024-03-19 (+4d) |  |  | none → 0d |  |  |
| 45 | **Tối ưu hóa và đảm bảo hiệu suất** | 2024-03-15 → 2024-03-19 (+4d) | 2024-03-15 → 2024-03-19 (+4d) | 0d → 1d? |  | 20d → 0d |  |  |
| 46 | Tối ưu hóa lại cấu trúc cơ sở dữ liệu để đảm bảo hiệu suất và khả năng mở rộng của hệ thống | 2024-03-15 → 2024-03-19 (+4d) | 2024-03-15 → 2024-03-19 (+4d) |  |  | none → 0d |  |  |
| 47 | Kiểm tra lại và đánh giá hiệu suất của các truy vấn và thao tác dữ liệu | 2024-03-15 → 2024-03-19 (+4d) | 2024-03-15 → 2024-03-19 (+4d) |  |  | none → 0d |  |  |
| 48 | **Viết báo cáo** |  |  | 0d → 1d? |  | 45d → 29d |  |  |
| 52 | **Lập Trình Hệ Thống** | 2024-03-15 → 2024-03-20 (+5d) | 2024-03-15 → 2024-03-20 (+5d) | 0d → 1d? |  | 20d → 0d |  |  |
| 53 | **Xây dựng giao diện người dùng(UI)** | 2024-03-15 → 2024-03-20 (+5d) | 2024-03-15 → 2024-03-20 (+5d) | 0d → 1d? |  | 20d → 0d |  |  |
| 54 | Xây dựng giao diện người dùng dựa trên thiết kế giao diện đã được xác định trước đó | 2024-03-15 → 2024-03-20 (+5d) | 2024-03-15 → 2024-03-20 (+5d) |  |  | none → 0d |  |  |
| 55 | Sử dụng framework UI để phát triển giao diện người dùng tương tác | 2024-03-15 → 2024-03-20 (+5d) | 2024-03-15 → 2024-03-20 (+5d) |  |  | none → 0d |  |  |
| 56 | **Tích hợp các thành phần** | 2024-03-15 → 2024-03-20 (+5d) | 2024-03-15 → 2024-03-20 (+5d) | 0d → 1d? |  | 20d → 0d |  |  |
| 57 | Tích hợp CSDL vào các chức năng logic hệ thống | 2024-03-15 → 2024-03-20 (+5d) | 2024-03-15 → 2024-03-20 (+5d) |  |  | none → 0d |  |  |
| 58 | Tích hợp giao diện vào các chức năng cụ thể để tạo ra ứng dụng hoàn chỉnh | 2024-03-15 → 2024-03-20 (+5d) | 2024-03-15 → 2024-03-20 (+5d) |  |  | none → 0d |  |  |
| 59 | **Kiểm tra và gỡ lỗi** | 2024-03-15 → 2024-03-20 (+5d) | 2024-03-15 → 2024-03-20 (+5d) | 0d → 1d? |  | 20d → 0d |  |  |
| 60 | Kiểm tra đảm bảo các chức năng và giao diện người dùng hoạt động đúng đắn và không gặp lỗi | 2024-03-15 → 2024-03-20 (+5d) | 2024-03-15 → 2024-03-20 (+5d) |  |  | none → 0d |  |  |
| 61 | Sửa các lỗi phát sinh trong quá trình lập trình | 2024-03-15 → 2024-03-20 (+5d) | 2024-03-15 → 2024-03-20 (+5d) |  |  | none → 0d |  |  |
| 62 | **Đánh Giá Và Tối Ưu Mã Nguồn** | 2024-03-15 → 2024-03-21 (+6d) | 2024-03-15 → 2024-03-21 (+6d) | 0d → 1d? |  | 20d → 0d |  |  |
| 63 | **Kiểm tra mã nguồn** | 2024-03-15 → 2024-03-21 (+6d) | 2024-03-15 → 2024-03-21 (+6d) | 0d → 1d? |  | 20d → 0d |  |  |
| 64 | Kiêm tra mã nguồn để phát hiện các lỗi cú pháp, cảnh báo tiềm ẩn và các vấn đề bảo mật | 2024-03-15 → 2024-03-21 (+6d) | 2024-03-15 → 2024-03-21 (+6d) |  |  | none → 0d |  |  |
| 65 | Kiểm tra tính nhất quán và tuân thủ các quy tắc lập trình | 2024-03-15 → 2024-03-21 (+6d) | 2024-03-15 → 2024-03-21 (+6d) |  |  | none → 0d |  |  |
| 66 | **Phân tích hiệu suất** | 2024-03-15 → 2024-03-21 (+6d) | 2024-03-15 → 2024-03-21 (+6d) | 0d → 1d? |  | 20d → 0d |  |  |
| 67 | Đánh giá hiệu suất của mã nguồn bao gồm thời gian phản hồi, tải trọng, sử dụng tài nguyên | 2024-03-15 → 2024-03-21 (+6d) | 2024-03-15 → 2024-03-21 (+6d) |  |  | none → 0d |  |  |
| 68 | Xác định các vấn đề liên quan đến hiệu suất và điều chỉnh mã nguồn để cải thiện hiệu suất | 2024-03-15 → 2024-03-21 (+6d) | 2024-03-15 → 2024-03-21 (+6d) |  |  | none → 0d |  |  |
| 69 | **Tối ưu hóa mã nguồn** | 2024-03-15 → 2024-03-21 (+6d) | 2024-03-15 → 2024-03-21 (+6d) | 0d → 1d? |  | 20d → 0d |  |  |
| 70 | Loại bỏ các mã không cần thiết hoặc mã lập lại | 2024-03-15 → 2024-03-21 (+6d) | 2024-03-15 → 2024-03-21 (+6d) |  |  | none → 0d |  |  |
| 71 | Sử dụng các cấu trúc dữ liệu và thuật toán hiệu quả để tối ưu hóa thời gian thực thi và tài nguyên sử dụng | 2024-03-15 → 2024-03-21 (+6d) | 2024-03-15 → 2024-03-21 (+6d) |  |  | none → 0d |  |  |
| 72 | **Kiểm tra tính bảo mật** | 2024-03-15 → 2024-03-21 (+6d) | 2024-03-15 → 2024-03-21 (+6d) | 0d → 1d? |  | 20d → 0d |  |  |
| 73 | Đánh giá và kiểm tra tính bảo mật của mã nguồn | 2024-03-15 → 2024-03-21 (+6d) | 2024-03-15 → 2024-03-21 (+6d) |  |  | none → 0d |  |  |
| 74 | Mã hóa dữ liệu, kiểm tra nhập liệu và xác thực người dùng | 2024-03-15 → 2024-03-21 (+6d) | 2024-03-15 → 2024-03-21 (+6d) |  |  | none → 0d |  |  |
| 75 | **Viết báo cáo đánh giá hiệu suất hoạt động, tính bảo mật hệ thống và khả năng mở rộng mã nguồn** | 2024-03-15 → 2024-03-21 (+6d) | 2024-03-15 → 2024-03-21 (+6d) | 0d → 1d? |  | 20d → 0d |  |  |
| 76 | Lập báo cáo đánh giá mã nguồn | 2024-03-15 → 2024-03-21 (+6d) | 2024-03-15 → 2024-03-21 (+6d) |  |  | none → 0d |  |  |
| 77 | Lập báo cáo đánh giá hiệu suất phần mềm | 2024-03-15 → 2024-03-21 (+6d) | 2024-03-15 → 2024-03-21 (+6d) |  |  | none → 0d |  |  |
| 78 | Lập báo cáo đánh giá mức độ an toàn hệ thống | 2024-03-15 → 2024-03-21 (+6d) | 2024-03-15 → 2024-03-21 (+6d) |  |  | none → 0d |  |  |
| 79 | **Viết bảng hướng dẫn sử dụng phần mềm** | 2024-03-15 → 2024-03-21 (+6d) | 2024-03-15 → 2024-03-21 (+6d) | 0d → 1d? |  | 20d → 0d |  |  |
| 80 | Trình bày cách sử dụng từng tính năng | 2024-03-15 → 2024-03-21 (+6d) | 2024-03-15 → 2024-03-21 (+6d) |  |  | none → 0d |  |  |
| 81 | Tổng hợp các lưu ý khi sử dụng hệ thống | 2024-03-15 → 2024-03-21 (+6d) | 2024-03-15 → 2024-03-21 (+6d) |  |  | none → 0d |  |  |
| 82 | Hoàn Thành Lập Trình | 2024-04-12 → 2024-03-21 (-22d) | 2024-04-12 → 2024-03-21 (-22d) |  |  | none → 0d |  |  |
| 83 | **Kiểm Thử** | 2024-04-12 → 2024-03-22 (-21d) | 2024-04-23 → 2024-03-29 (-25d) |  |  |  |  |  |
| 84 | Lập Bảng Kế Hoạch Kiểm Thử | 2024-04-12 → 2024-03-22 (-21d) | 2024-04-12 → 2024-03-22 (-21d) |  |  |  |  |  |
| 85 | Viết Và Tiến Hành Các Ca Kiểm Thử | 2024-04-15 → 2024-03-25 (-21d) | 2024-04-15 → 2024-03-25 (-21d) |  |  |  |  |  |
| 86 | Kiểm Thử Toàn Hệ Thống | 2024-04-16 → 2024-03-26 (-21d) | 2024-04-16 → 2024-03-26 (-21d) |  |  |  |  |  |
| 87 | Xác Định Và Sữa Lỗi | 2024-04-17 → 2024-03-27 (-21d) | 2024-04-19 → 2024-03-28 (-22d) |  |  |  |  |  |
| 88 | Đánh Giá Cuối Cùng | 2024-04-22 → 2024-03-29 (-24d) | 2024-04-22 → 2024-03-29 (-24d) |  |  |  |  |  |
| 89 | Hoàn Thành Kiểm Thử | 2024-04-23 → 2024-03-29 (-25d) | 2024-04-23 → 2024-03-29 (-25d) |  |  | none → 0d |  |  |
| 90 | **Bàn Giao** | 2024-04-23 → 2024-04-01 (-22d) | 2024-04-24 → 2024-04-02 (-22d) |  |  |  |  |  |

| ID | Task | Start | Finish |
| --- | --- | --- | --- |
| 91 | Cài Đặt Phần Mềm | 2024-04-23 → 2024-04-01 (-22d) | 2024-04-23 → 2024-04-01 (-22d) |
| 92 | Hướng Dẫn Phầm Mềm | 2024-04-24 → 2024-04-02 (-22d) | 2024-04-24 → 2024-04-02 (-22d) |

## Version 4 (saved 2024-03-13)

Note of the change: AI

Last finish 2024-04-02 → 2024-04-25 (+23d).

Changed:

| ID | Task | Start | Finish | Duration | Total float | Predecessors | Other |
| --- | --- | --- | --- | --- | --- | --- | --- |
| 1 | **XÂY DỰNG HỆ THỐNG QUẢN LÝ KẾT NỐI VÀ CUNG CẤP GIA SƯ TP-HUẾ** |  | 2024-04-02 → 2024-04-25 (+23d) | 30d? → 46d |  |  |  |
| 17 | **Triển Khai** | 2024-02-21 → 2024-03-15 (+23d) | 2024-03-21 → 2024-04-12 (+22d) | 22d? → 21d | 8d → 0d |  |  |
| 18 | **Triển Khai Logic Hệ Thông** |  | 2024-03-18 → 2024-03-21 (+3d) | 2d → 5d |  | 16 → none |  |
| 19 | **Phân tích thuật toán cho từng chức năng hệ thống** |  | 2024-03-18 → 2024-03-15 (-3d) | 2d → 1d |  |  |  |
| 21 | Xác định thuật toán và quy trình logic xử lý cho mỗi chức năng |  | 2024-03-18 → 2024-03-15 (-3d) | 1.5d → 1d |  | 20 → 20SS |  |
| 22 | **Xác định ngôn ngữ lập trình, công cụ phát triển và triển khai thuật toán** | 2024-03-18 → 2024-03-15 (-3d) | 2024-03-19 → 2024-03-18 (-1d) |  | 10d → 0d |  |  |
| 23 | Chọn ngôn ngữ lập trình, công cụ phát triển và thư viện | 2024-03-18 → 2024-03-15 (-3d) | 2024-03-18 → 2024-03-15 (-3d) | 2h → 0.5d | 10d → 0d |  | constraint start no earlier than 2024-03-18 → start no earlier than 2024-03-15 |
| 24 | Triển khai xây dựng thuật toán cho các chức năng | 2024-03-18 → 2024-03-15 (-3d) |  | 1d → 2d | 10d → 0d |  |  |
| 25 | Kiểm tra tính logic xử lý của từng chức năng | 2024-03-19 → 2024-03-18 (-1d) | 2024-03-19 → 2024-03-18 (-1d) |  | 10d → 0d | 24 → 24SS+1d |  |
| 26 | **Liên kết các chức năng, logic hóa hệ thống** | 2024-02-21 → 2024-03-18 (+26d) | 2024-02-21 → 2024-03-19 (+27d) | 1d? → 1.5d | 29d → 0d |  |  |
| 27 | Kết nối các chức năng, đảm bảo tính logic hệ thống | 2024-02-21 → 2024-03-18 (+26d) | 2024-02-21 → 2024-03-19 (+27d) | 1d? → 1d | 29d → 0d | none → 25SS+0.5d |  |
| 28 | Kiểm tra tính logic, hoạt động của hệ thống và đảm bảo không có sự xung đột giữa các chức năng | 2024-02-21 → 2024-03-19 (+27d) | 2024-02-21 → 2024-03-19 (+27d) | 1d? → 1d | 29d → 0d | none → 27SS+0.5d |  |
| 29 | **Kiểm tra và xác định tính đúng đắn của thuật toán và quy trình logic của hệ thống** | 2024-02-21 → 2024-03-20 (+28d) | 2024-02-21 → 2024-03-20 (+28d) | 1d? → 1d | 29d → 0d |  |  |
| 30 | Thực hiện các bước kiểm tra thuật toán và quy trình logic hệ thống | 2024-02-21 → 2024-03-20 (+28d) | 2024-02-21 → 2024-03-20 (+28d) | 1d? → 1d | 29d → 0d | none → 28 |  |
| 31 | Gỡ lỗi và sửa các lỗi phát sinh trong quá trình triển khai thuật toán | 2024-02-21 → 2024-03-20 (+28d) | 2024-02-21 → 2024-03-20 (+28d) | 1d? → 1d | 29d → 0d | none → 30SS |  |
| 32 | **Viết báo cáo thuật toán, logic hệ thống** | 2024-02-21 → 2024-03-21 (+29d) | 2024-02-21 → 2024-03-21 (+29d) | 1d? → 1d | 29d → 0d |  |  |
| 33 | Lập báo cáo chi tiết về các thuật toán được dùng trong mỗi chức năng | 2024-02-21 → 2024-03-21 (+29d) | 2024-02-21 → 2024-03-21 (+29d) | 1d? → 1d | 29d → 0d | none → 31 |  |
| 34 | Lập báo cáo cụ thể logic hoạt động của mỗi chức năng và nguyên lý hoạt động của các chức năng đó | 2024-02-21 → 2024-03-21 (+29d) | 2024-02-21 → 2024-03-21 (+29d) | 1d? → 1d | 29d → 0d | none → 33SS |  |
| 35 | **Phát Triển Các Thành Phần CSDL** | 2024-03-19 → 2024-03-22 (+3d) | 2024-03-19 → 2024-03-28 (+9d) | 1d? → 5d |  |  |  |
| 36 | **Thiết kế bảng, thành phần dữ liệu** | 2024-03-19 → 2024-03-22 (+3d) | 2024-03-19 → 2024-03-22 (+3d) | 1d? → 1d |  |  |  |
| 37 | Cài đặt và sử dụng SQL Sever để thiết kế cơ sở dữ liệu | 2024-03-19 → 2024-03-22 (+3d) | 2024-03-19 → 2024-03-22 (+3d) | 1d? → 1d |  | none → 34 |  |
| 38 | Xây dựng cấu trúc các bảng dữ liệu cần thiết dựa trên mô hình dữ liệu đã thiết kế | 2024-03-19 → 2024-03-22 (+3d) | 2024-03-19 → 2024-03-22 (+3d) | 1d? → 1d |  | none → 37SS |  |
| 39 | Xây dựng các liên kết, ràng buộc giữa các bảng, đảm bảo tính nhất quán dữ liệu | 2024-03-19 → 2024-03-22 (+3d) | 2024-03-19 → 2024-03-22 (+3d) | 1d? → 1d |  | none → 38SS |  |
| 40 | **Thiết kế chức năng** | 2024-03-19 → 2024-03-25 (+6d) | 2024-03-19 → 2024-03-26 (+7d) | 1d? → 2d |  |  |  |
| 41 | Lập trình các hàm chức năng truy xuất dữ liệu bao gồm thêm, sửa, xóa và truy vấn(function)) | 2024-03-19 → 2024-03-25 (+6d) | 2024-03-19 → 2024-03-25 (+6d) | 1d? → 1d |  | none → 39 |  |
| 42 | Lập trình các quy trình xử lý dữ liệu(procedure) | 2024-03-19 → 2024-03-25 (+6d) | 2024-03-19 → 2024-03-25 (+6d) | 1d? → 1d |  | none → 41SS |  |
| 43 | Lập trình các bẩy sự kiện(trigger) | 2024-03-19 → 2024-03-26 (+7d) | 2024-03-19 → 2024-03-26 (+7d) | 1d? → 1d |  | none → 42 |  |
| 44 | Lập trình các giao tác đảm bảo tính nhất quán dữ liệu(transaction) | 2024-03-19 → 2024-03-26 (+7d) | 2024-03-19 → 2024-03-26 (+7d) | 1d? → 1d |  | none → 43SS |  |
| 45 | **Tối ưu hóa và đảm bảo hiệu suất** | 2024-03-19 → 2024-03-27 (+8d) | 2024-03-19 → 2024-03-27 (+8d) | 1d? → 1d |  |  |  |
| 46 | Tối ưu hóa lại cấu trúc cơ sở dữ liệu để đảm bảo hiệu suất và khả năng mở rộng của hệ thống | 2024-03-19 → 2024-03-27 (+8d) | 2024-03-19 → 2024-03-27 (+8d) | 1d? → 1d |  | none → 44 |  |
| 47 | Kiểm tra lại và đánh giá hiệu suất của các truy vấn và thao tác dữ liệu | 2024-03-19 → 2024-03-27 (+8d) | 2024-03-19 → 2024-03-27 (+8d) | 1d? → 1d |  | none → 46SS |  |
| 48 | **Viết báo cáo** | 2024-02-21 → 2024-03-28 (+36d) | 2024-02-21 → 2024-03-28 (+36d) | 1d? → 1d | 29d → 0d |  |  |
| 49 | Lập báo cáo chi tiết các thành phần trong CSDL(Các bảng, thuộc tính, kiểu dữ liệu,...) | 2024-02-21 → 2024-03-28 (+36d) | 2024-02-21 → 2024-03-28 (+36d) | 1d? → 1d | 29d → 0d | none → 47 |  |
| 50 | Viết hướng dẫn chi tiết sử dụng các hàm chức năng, quy trình, bẩy sự kiện và giao tác của CSDL | 2024-02-21 → 2024-03-28 (+36d) | 2024-02-21 → 2024-03-28 (+36d) | 1d? → 1d | 29d → 0d | none → 49SS |  |
| 51 | Đánh giá chi tiết hiệu suất hoạt động của các hàm chức năng, quy trình, bẩy sự kiện và giao tác | 2024-02-21 → 2024-03-28 (+36d) | 2024-02-21 → 2024-03-28 (+36d) | 1d? → 1d | 29d → 0d | none → 50SS |  |
| 52 | **Lập Trình Hệ Thống** | 2024-03-20 → 2024-03-29 (+9d) | 2024-03-20 → 2024-04-04 (+15d) | 1d? → 5d |  |  |  |
| 53 | **Xây dựng giao diện người dùng(UI)** | 2024-03-20 → 2024-03-29 (+9d) | 2024-03-20 → 2024-04-01 (+12d) | 1d? → 2d |  |  |  |
| 54 | Xây dựng giao diện người dùng dựa trên thiết kế giao diện đã được xác định trước đó | 2024-03-20 → 2024-03-29 (+9d) | 2024-03-20 → 2024-04-01 (+12d) | 1d? → 1.5d |  | none → 51 |  |
| 55 | Sử dụng framework UI để phát triển giao diện người dùng tương tác | 2024-03-20 → 2024-04-01 (+12d) | 2024-03-20 → 2024-04-01 (+12d) | 1d? → 1d |  | none → 54SS+1d |  |
| 56 | **Tích hợp các thành phần** | 2024-03-20 → 2024-04-02 (+13d) | 2024-03-20 → 2024-04-03 (+14d) | 1d? → 2d |  |  |  |
| 57 | Tích hợp CSDL vào các chức năng logic hệ thống | 2024-03-20 → 2024-04-02 (+13d) | 2024-03-20 → 2024-04-02 (+13d) | 1d? → 1d |  | none → 55 |  |
| 58 | Tích hợp giao diện vào các chức năng cụ thể để tạo ra ứng dụng hoàn chỉnh | 2024-03-20 → 2024-04-03 (+14d) | 2024-03-20 → 2024-04-03 (+14d) | 1d? → 1d |  | none → 57 |  |
| 59 | **Kiểm tra và gỡ lỗi** | 2024-03-20 → 2024-04-04 (+15d) | 2024-03-20 → 2024-04-04 (+15d) | 1d? → 1d |  |  |  |
| 60 | Kiểm tra đảm bảo các chức năng và giao diện người dùng hoạt động đúng đắn và không gặp lỗi | 2024-03-20 → 2024-04-04 (+15d) | 2024-03-20 → 2024-04-04 (+15d) | 1d? → 1d |  | none → 58 |  |
| 61 | Sửa các lỗi phát sinh trong quá trình lập trình | 2024-03-20 → 2024-04-04 (+15d) | 2024-03-20 → 2024-04-04 (+15d) | 1d? → 1d |  | none → 60SS |  |
| 62 | **Đánh Giá Và Tối Ưu Mã Nguồn** | 2024-03-21 → 2024-04-05 (+15d) | 2024-03-21 → 2024-04-12 (+22d) | 1d? → 6d |  |  |  |
| 63 | **Kiểm tra mã nguồn** | 2024-03-21 → 2024-04-05 (+15d) | 2024-03-21 → 2024-04-08 (+18d) | 1d? → 2d |  |  |  |
| 64 | Kiêm tra mã nguồn để phát hiện các lỗi cú pháp, cảnh báo tiềm ẩn và các vấn đề bảo mật | 2024-03-21 → 2024-04-05 (+15d) | 2024-03-21 → 2024-04-08 (+18d) | 1d? → 2d |  | none → 61 |  |
| 65 | Kiểm tra tính nhất quán và tuân thủ các quy tắc lập trình | 2024-03-21 → 2024-04-05 (+15d) | 2024-03-21 → 2024-04-08 (+18d) | 1d? → 2d |  | none → 64SS |  |
| 66 | **Phân tích hiệu suất** | 2024-03-21 → 2024-04-08 (+18d) | 2024-03-21 → 2024-04-09 (+19d) | 1d? → 2d |  |  |  |
| 67 | Đánh giá hiệu suất của mã nguồn bao gồm thời gian phản hồi, tải trọng, sử dụng tài nguyên | 2024-03-21 → 2024-04-08 (+18d) | 2024-03-21 → 2024-04-09 (+19d) | 1d? → 2d |  | none → 65SS+1d |  |
| 68 | Xác định các vấn đề liên quan đến hiệu suất và điều chỉnh mã nguồn để cải thiện hiệu suất | 2024-03-21 → 2024-04-09 (+19d) | 2024-03-21 → 2024-04-09 (+19d) | 1d? → 1d |  | none → 67SS+1d |  |
| 69 | **Tối ưu hóa mã nguồn** | 2024-03-21 → 2024-04-10 (+20d) | 2024-03-21 → 2024-04-10 (+20d) | 1d? → 1d |  |  |  |
| 70 | Loại bỏ các mã không cần thiết hoặc mã lập lại | 2024-03-21 → 2024-04-10 (+20d) | 2024-03-21 → 2024-04-10 (+20d) | 1d? → 1d |  | none → 68 |  |
| 71 | Sử dụng các cấu trúc dữ liệu và thuật toán hiệu quả để tối ưu hóa thời gian thực thi và tài nguyên sử dụng | 2024-03-21 → 2024-04-10 (+20d) | 2024-03-21 → 2024-04-10 (+20d) | 1d? → 1d |  | none → 70SS |  |
| 72 | **Kiểm tra tính bảo mật** | 2024-03-21 → 2024-04-10 (+20d) | 2024-03-21 → 2024-04-11 (+21d) | 1d? → 1.5d |  |  |  |
| 73 | Đánh giá và kiểm tra tính bảo mật của mã nguồn | 2024-03-21 → 2024-04-10 (+20d) | 2024-03-21 → 2024-04-11 (+21d) | 1d? → 1d |  | none → 71SS+0.5d |  |
| 74 | Mã hóa dữ liệu, kiểm tra nhập liệu và xác thực người dùng | 2024-03-21 → 2024-04-11 (+21d) | 2024-03-21 → 2024-04-11 (+21d) | 1d? → 1d |  | none → 73SS+0.5d |  |
| 75 | **Viết báo cáo đánh giá hiệu suất hoạt động, tính bảo mật hệ thống và khả năng mở rộng mã nguồn** | 2024-03-21 → 2024-04-12 (+22d) | 2024-03-21 → 2024-04-12 (+22d) | 1d? → 1d |  |  |  |
| 76 | Lập báo cáo đánh giá mã nguồn | 2024-03-21 → 2024-04-12 (+22d) | 2024-03-21 → 2024-04-12 (+22d) | 1d? → 1d |  | none → 74 |  |
| 77 | Lập báo cáo đánh giá hiệu suất phần mềm | 2024-03-21 → 2024-04-12 (+22d) | 2024-03-21 → 2024-04-12 (+22d) | 1d? → 1d |  | none → 76SS |  |
| 78 | Lập báo cáo đánh giá mức độ an toàn hệ thống | 2024-03-21 → 2024-04-12 (+22d) | 2024-03-21 → 2024-04-12 (+22d) | 1d? → 1d |  | none → 77SS |  |
| 79 | **Viết bảng hướng dẫn sử dụng phần mềm** | 2024-03-21 → 2024-04-12 (+22d) | 2024-03-21 → 2024-04-12 (+22d) | 1d? → 1d |  |  |  |
| 80 | Trình bày cách sử dụng từng tính năng | 2024-03-21 → 2024-04-12 (+22d) | 2024-03-21 → 2024-04-12 (+22d) | 1d? → 1d |  | none → 78SS |  |
| 81 | Tổng hợp các lưu ý khi sử dụng hệ thống | 2024-03-21 → 2024-04-12 (+22d) | 2024-03-21 → 2024-04-12 (+22d) | 1d? → 1d |  | none → 80SS |  |
| 82 | Hoàn Thành Lập Trình | 2024-03-21 → 2024-04-12 (+22d) | 2024-03-21 → 2024-04-12 (+22d) |  |  |  |  |
| 83 | **Kiểm Thử** | 2024-03-22 → 2024-04-15 (+24d) | 2024-03-29 → 2024-04-23 (+25d) |  |  |  |  |
| 84 | Lập Bảng Kế Hoạch Kiểm Thử | 2024-03-22 → 2024-04-15 (+24d) | 2024-03-22 → 2024-04-15 (+24d) |  |  |  |  |
| 85 | Viết Và Tiến Hành Các Ca Kiểm Thử | 2024-03-25 → 2024-04-16 (+22d) | 2024-03-25 → 2024-04-16 (+22d) |  |  |  |  |
| 86 | Kiểm Thử Toàn Hệ Thống | 2024-03-26 → 2024-04-17 (+22d) | 2024-03-26 → 2024-04-17 (+22d) |  |  |  |  |

| ID | Task | Start | Finish |
| --- | --- | --- | --- |
| 87 | Xác Định Và Sữa Lỗi | 2024-03-27 → 2024-04-19 (+23d) | 2024-03-28 → 2024-04-22 (+25d) |
| 88 | Đánh Giá Cuối Cùng | 2024-03-29 → 2024-04-23 (+25d) | 2024-03-29 → 2024-04-23 (+25d) |
| 89 | Hoàn Thành Kiểm Thử | 2024-03-29 → 2024-04-23 (+25d) | 2024-03-29 → 2024-04-23 (+25d) |
| 90 | **Bàn Giao** | 2024-04-01 → 2024-04-24 (+23d) | 2024-04-02 → 2024-04-25 (+23d) |
| 91 | Cài Đặt Phần Mềm | 2024-04-01 → 2024-04-24 (+23d) | 2024-04-01 → 2024-04-24 (+23d) |
| 92 | Hướng Dẫn Phầm Mềm | 2024-04-02 → 2024-04-25 (+23d) | 2024-04-02 → 2024-04-25 (+23d) |

## Version 5 (saved 2024-03-14)

Note of the change: Ai

Last finish 2024-04-25 → 2024-04-24 (-1d).

Changed:

| ID | Task | Start | Finish | Duration | Total float | Predecessors | Other |
| --- | --- | --- | --- | --- | --- | --- | --- |
| 1 | **XÂY DỰNG HỆ THỐNG QUẢN LÝ KẾT NỐI VÀ CUNG CẤP GIA SƯ TP-HUẾ** |  | 2024-04-25 → 2024-04-24 (-1d) | 46d → 45d |  |  |  |
| 17 | **Triển Khai** |  | 2024-04-12 → 2024-04-24 (+12d) | 21d → 28d |  |  |  |
| 18 | **Triển Khai Logic Hệ Thông** |  | 2024-03-21 → 2024-03-26 (+5d) | 5d → 8d |  |  |  |
| 20 | Phân tích và hiểu rõ các yêu câu của từng chức năng |  |  | 0.5d → 1d | 0d → 27d |  |  |
| 21 | Xác định thuật toán và quy trình logic xử lý cho mỗi chức năng |  |  |  |  | 20SS → 16 | constraint none → start no earlier than 2024-02-16 |
| 22 | **Xác định ngôn ngữ lập trình, công cụ phát triển và triển khai thuật toán** | 2024-03-15 → 2024-03-18 (+3d) | 2024-03-18 → 2024-03-20 (+2d) | 2d → 3d |  |  |  |
| 23 | Chọn ngôn ngữ lập trình, công cụ phát triển và thư viện | 2024-03-15 → 2024-03-18 (+3d) | 2024-03-15 → 2024-03-18 (+3d) | 0.5d → 1d | 0d → 26d | 21SS → 21 |  |
| 24 | Triển khai xây dựng thuật toán cho các chức năng | 2024-03-15 → 2024-03-18 (+3d) | 2024-03-18 → 2024-03-19 (+1d) |  |  | 23SS → 21 | constraint start no earlier than 2024-02-19 → start no earlier than 2024-03-18 |
| 25 | Kiểm tra tính logic xử lý của từng chức năng | 2024-03-18 → 2024-03-20 (+2d) | 2024-03-18 → 2024-03-20 (+2d) |  |  | 24SS+1d → 24 |  |
| 26 | **Liên kết các chức năng, logic hóa hệ thống** | 2024-03-18 → 2024-03-21 (+3d) | 2024-03-19 → 2024-03-22 (+3d) | 1.5d → 2d |  |  |  |
| 27 | Kết nối các chức năng, đảm bảo tính logic hệ thống | 2024-03-18 → 2024-03-21 (+3d) | 2024-03-19 → 2024-03-21 (+2d) |  |  | 25SS+0.5d → 25 |  |
| 28 | Kiểm tra tính logic, hoạt động của hệ thống và đảm bảo không có sự xung đột giữa các chức năng | 2024-03-19 → 2024-03-22 (+3d) | 2024-03-19 → 2024-03-22 (+3d) |  |  | 27SS+0.5d → 27 |  |
| 29 | **Kiểm tra và xác định tính đúng đắn của thuật toán và quy trình logic của hệ thống** | 2024-03-20 → 2024-03-25 (+5d) | 2024-03-20 → 2024-03-25 (+5d) |  |  |  |  |
| 30 | Thực hiện các bước kiểm tra thuật toán và quy trình logic hệ thống | 2024-03-20 → 2024-03-25 (+5d) | 2024-03-20 → 2024-03-25 (+5d) |  | 0d → 21d |  |  |
| 31 | Gỡ lỗi và sửa các lỗi phát sinh trong quá trình triển khai thuật toán | 2024-03-20 → 2024-03-25 (+5d) | 2024-03-20 → 2024-03-25 (+5d) |  |  | 30SS → 28 | constraint none → start no earlier than 2024-03-25 |
| 32 | **Viết báo cáo thuật toán, logic hệ thống** | 2024-03-21 → 2024-03-26 (+5d) | 2024-03-21 → 2024-03-26 (+5d) |  |  |  |  |
| 33 | Lập báo cáo chi tiết về các thuật toán được dùng trong mỗi chức năng | 2024-03-21 → 2024-03-26 (+5d) | 2024-03-21 → 2024-03-26 (+5d) |  | 0d → 20d |  |  |
| 34 | Lập báo cáo cụ thể logic hoạt động của mỗi chức năng và nguyên lý hoạt động của các chức năng đó | 2024-03-21 → 2024-03-26 (+5d) | 2024-03-21 → 2024-03-26 (+5d) |  |  | 33SS → 31 | constraint none → start no earlier than 2024-03-26 |
| 35 | **Phát Triển Các Thành Phần CSDL** | 2024-03-22 → 2024-03-27 (+5d) | 2024-03-28 → 2024-04-02 (+5d) |  |  | 18 → none |  |
| 36 | **Thiết kế bảng, thành phần dữ liệu** | 2024-03-22 → 2024-03-27 (+5d) | 2024-03-22 → 2024-03-27 (+5d) |  |  |  |  |
| 37 | Cài đặt và sử dụng SQL Sever để thiết kế cơ sở dữ liệu | 2024-03-22 → 2024-03-27 (+5d) | 2024-03-22 → 2024-03-27 (+5d) |  | 0d → 19d |  |  |
| 38 | Xây dựng cấu trúc các bảng dữ liệu cần thiết dựa trên mô hình dữ liệu đã thiết kế | 2024-03-22 → 2024-03-27 (+5d) | 2024-03-22 → 2024-03-27 (+5d) |  | 0d → 19d | 37SS → 34 |  |
| 39 | Xây dựng các liên kết, ràng buộc giữa các bảng, đảm bảo tính nhất quán dữ liệu | 2024-03-22 → 2024-03-27 (+5d) | 2024-03-22 → 2024-03-27 (+5d) |  |  | 38SS → 34 |  |
| 40 | **Thiết kế chức năng** | 2024-03-25 → 2024-03-28 (+3d) | 2024-03-26 → 2024-03-29 (+3d) |  |  |  |  |
| 41 | Lập trình các hàm chức năng truy xuất dữ liệu bao gồm thêm, sửa, xóa và truy vấn(function)) | 2024-03-25 → 2024-03-28 (+3d) | 2024-03-25 → 2024-03-28 (+3d) |  | 0d → 18d |  |  |
| 42 | Lập trình các quy trình xử lý dữ liệu(procedure) | 2024-03-25 → 2024-03-28 (+3d) | 2024-03-25 → 2024-03-28 (+3d) |  |  | 41SS → 39 |  |
| 43 | Lập trình các bẩy sự kiện(trigger) | 2024-03-26 → 2024-03-29 (+3d) | 2024-03-26 → 2024-03-29 (+3d) |  | 0d → 17d |  |  |
| 44 | Lập trình các giao tác đảm bảo tính nhất quán dữ liệu(transaction) | 2024-03-26 → 2024-03-29 (+3d) | 2024-03-26 → 2024-03-29 (+3d) |  |  | 43SS → 42 |  |
| 45 | **Tối ưu hóa và đảm bảo hiệu suất** | 2024-03-27 → 2024-04-01 (+5d) | 2024-03-27 → 2024-04-01 (+5d) |  |  |  |  |
| 46 | Tối ưu hóa lại cấu trúc cơ sở dữ liệu để đảm bảo hiệu suất và khả năng mở rộng của hệ thống | 2024-03-27 → 2024-04-01 (+5d) | 2024-03-27 → 2024-04-01 (+5d) |  | 0d → 16d |  |  |
| 47 | Kiểm tra lại và đánh giá hiệu suất của các truy vấn và thao tác dữ liệu | 2024-03-27 → 2024-04-01 (+5d) | 2024-03-27 → 2024-04-01 (+5d) |  |  | 46SS → 44 |  |
| 48 | **Viết báo cáo** | 2024-03-28 → 2024-04-02 (+5d) | 2024-03-28 → 2024-04-02 (+5d) |  |  |  |  |
| 49 | Lập báo cáo chi tiết các thành phần trong CSDL(Các bảng, thuộc tính, kiểu dữ liệu,...) | 2024-03-28 → 2024-04-02 (+5d) | 2024-03-28 → 2024-04-02 (+5d) |  | 0d → 15d |  |  |
| 50 | Viết hướng dẫn chi tiết sử dụng các hàm chức năng, quy trình, bẩy sự kiện và giao tác của CSDL | 2024-03-28 → 2024-04-02 (+5d) | 2024-03-28 → 2024-04-02 (+5d) |  | 0d → 15d | 49SS → 47 |  |
| 51 | Đánh giá chi tiết hiệu suất hoạt động của các hàm chức năng, quy trình, bẩy sự kiện và giao tác | 2024-03-28 → 2024-04-02 (+5d) | 2024-03-28 → 2024-04-02 (+5d) |  |  | 50SS → 47 |  |
| 52 | **Lập Trình Hệ Thống** | 2024-03-29 → 2024-04-03 (+5d) | 2024-04-04 → 2024-04-11 (+7d) | 5d → 7d |  | 35 → none |  |
| 53 | **Xây dựng giao diện người dùng(UI)** | 2024-03-29 → 2024-04-03 (+5d) | 2024-04-01 → 2024-04-05 (+4d) | 2d → 3d |  |  |  |
| 54 | Xây dựng giao diện người dùng dựa trên thiết kế giao diện đã được xác định trước đó | 2024-03-29 → 2024-04-03 (+5d) | 2024-04-01 → 2024-04-04 (+3d) |  |  |  |  |
| 55 | Sử dụng framework UI để phát triển giao diện người dùng tương tác | 2024-04-01 → 2024-04-04 (+3d) | 2024-04-01 → 2024-04-05 (+4d) | 1d → 1.5d |  | 54SS+1d → 54 |  |
| 56 | **Tích hợp các thành phần** | 2024-04-02 → 2024-04-08 (+6d) | 2024-04-03 → 2024-04-10 (+7d) | 2d → 3d |  |  |  |
| 57 | Tích hợp CSDL vào các chức năng logic hệ thống | 2024-04-02 → 2024-04-08 (+6d) | 2024-04-02 → 2024-04-09 (+7d) | 1d → 1.5d |  |  |  |
| 58 | Tích hợp giao diện vào các chức năng cụ thể để tạo ra ứng dụng hoàn chỉnh | 2024-04-03 → 2024-04-09 (+6d) | 2024-04-03 → 2024-04-10 (+7d) | 1d → 1.5d |  |  |  |
| 59 | **Kiểm tra và gỡ lỗi** | 2024-04-04 → 2024-04-11 (+7d) | 2024-04-04 → 2024-04-11 (+7d) |  |  |  |  |
| 60 | Kiểm tra đảm bảo các chức năng và giao diện người dùng hoạt động đúng đắn và không gặp lỗi | 2024-04-04 → 2024-04-11 (+7d) | 2024-04-04 → 2024-04-11 (+7d) |  | 0d → 8d |  |  |
| 61 | Sửa các lỗi phát sinh trong quá trình lập trình | 2024-04-04 → 2024-04-11 (+7d) | 2024-04-04 → 2024-04-11 (+7d) |  |  | 60SS → 58 |  |
| 62 | **Đánh Giá Và Tối Ưu Mã Nguồn** | 2024-04-05 → 2024-04-12 (+7d) | 2024-04-12 → 2024-04-24 (+12d) | 6d → 8d |  | 52 → none |  |
| 63 | **Kiểm tra mã nguồn** | 2024-04-05 → 2024-04-12 (+7d) | 2024-04-08 → 2024-04-15 (+7d) |  |  |  |  |
| 64 | Kiêm tra mã nguồn để phát hiện các lỗi cú pháp, cảnh báo tiềm ẩn và các vấn đề bảo mật | 2024-04-05 → 2024-04-12 (+7d) | 2024-04-08 → 2024-04-15 (+7d) |  | 0d → 6d |  |  |
| 65 | Kiểm tra tính nhất quán và tuân thủ các quy tắc lập trình | 2024-04-05 → 2024-04-12 (+7d) | 2024-04-08 → 2024-04-15 (+7d) |  |  | 64SS → 61 |  |
| 66 | **Phân tích hiệu suất** | 2024-04-08 → 2024-04-16 (+8d) | 2024-04-09 → 2024-04-17 (+8d) |  |  |  |  |
| 67 | Đánh giá hiệu suất của mã nguồn bao gồm thời gian phản hồi, tải trọng, sử dụng tài nguyên | 2024-04-08 → 2024-04-16 (+8d) | 2024-04-09 → 2024-04-17 (+8d) |  | 0d → 4d | 65SS+1d → 65 |  |
| 68 | Xác định các vấn đề liên quan đến hiệu suất và điều chỉnh mã nguồn để cải thiện hiệu suất | 2024-04-09 → 2024-04-16 (+7d) | 2024-04-09 → 2024-04-17 (+8d) | 1d → 2d |  | 67SS+1d → 65 |  |
| 69 | **Tối ưu hóa mã nguồn** | 2024-04-10 → 2024-04-19 (+9d) | 2024-04-10 → 2024-04-19 (+9d) |  |  |  |  |
| 70 | Loại bỏ các mã không cần thiết hoặc mã lập lại | 2024-04-10 → 2024-04-19 (+9d) | 2024-04-10 → 2024-04-19 (+9d) |  | 0d → 3d |  |  |
| 71 | Sử dụng các cấu trúc dữ liệu và thuật toán hiệu quả để tối ưu hóa thời gian thực thi và tài nguyên sử dụng | 2024-04-10 → 2024-04-19 (+9d) | 2024-04-10 → 2024-04-19 (+9d) |  |  | 70SS → 68 |  |
| 72 | **Kiểm tra tính bảo mật** | 2024-04-10 → 2024-04-22 (+12d) | 2024-04-11 → 2024-04-23 (+12d) |  |  |  |  |
| 73 | Đánh giá và kiểm tra tính bảo mật của mã nguồn | 2024-04-10 → 2024-04-22 (+12d) | 2024-04-11 → 2024-04-23 (+12d) | 1d → 1.5d | 0d → 1.5d | 71SS+0.5d → 71 |  |
| 74 | Mã hóa dữ liệu, kiểm tra nhập liệu và xác thực người dùng | 2024-04-11 → 2024-04-22 (+11d) | 2024-04-11 → 2024-04-23 (+12d) | 1d → 1.5d |  | 73SS+0.5d → 71 |  |
| 75 | **Viết báo cáo đánh giá hiệu suất hoạt động, tính bảo mật hệ thống và khả năng mở rộng mã nguồn** | 2024-04-12 → 2024-04-23 (+11d) | 2024-04-12 → 2024-04-24 (+12d) | 1d → 1.5d |  |  |  |
| 76 | Lập báo cáo đánh giá mã nguồn | 2024-04-12 → 2024-04-23 (+11d) | 2024-04-12 → 2024-04-24 (+12d) | 1d → 1.5d |  |  |  |
| 77 | Lập báo cáo đánh giá hiệu suất phần mềm | 2024-04-12 → 2024-04-23 (+11d) | 2024-04-12 → 2024-04-24 (+12d) | 1d → 1.5d |  | 76SS → 74 |  |
| 78 | Lập báo cáo đánh giá mức độ an toàn hệ thống | 2024-04-12 → 2024-04-23 (+11d) | 2024-04-12 → 2024-04-24 (+12d) | 1d → 1.5d |  | 77SS → 74 |  |
| 79 | **Viết bảng hướng dẫn sử dụng phần mềm** | 2024-04-12 → 2024-04-23 (+11d) | 2024-04-12 → 2024-04-24 (+12d) | 1d → 1.5d |  |  |  |
| 80 | Trình bày cách sử dụng từng tính năng | 2024-04-12 → 2024-04-23 (+11d) | 2024-04-12 → 2024-04-24 (+12d) | 1d → 1.5d |  | 78SS → 74 |  |
| 81 | Tổng hợp các lưu ý khi sử dụng hệ thống | 2024-04-12 → 2024-04-23 (+11d) | 2024-04-12 → 2024-04-24 (+12d) | 1d → 1.5d |  | 80SS → 74 |  |
| 82 | Hoàn Thành Lập Trình | 2024-04-12 → 2024-02-21 (-51d) | 2024-04-12 → 2024-02-21 (-51d) |  | 0d → 37d | 62 → none |  |
| 83 | **Kiểm Thử** | 2024-04-15 → 2024-02-21 (-54d) | 2024-04-23 → 2024-03-01 (-53d) | 6d → 8d | 0d → 37d |  |  |
| 84 | Lập Bảng Kế Hoạch Kiểm Thử | 2024-04-15 → 2024-02-21 (-54d) | 2024-04-15 → 2024-02-21 (-54d) |  | 0d → 37d |  |  |
| 85 | Viết Và Tiến Hành Các Ca Kiểm Thử | 2024-04-16 → 2024-02-22 (-54d) | 2024-04-16 → 2024-02-22 (-54d) |  | 0d → 37d |  |  |
| 86 | Kiểm Thử Toàn Hệ Thống | 2024-04-17 → 2024-02-23 (-54d) | 2024-04-17 → 2024-02-23 (-54d) |  | 0d → 37d |  |  |

| ID | Task | Start | Finish | Total float |
| --- | --- | --- | --- | --- |
| 87 | Xác Định Và Sữa Lỗi | 2024-04-19 → 2024-02-26 (-53d) | 2024-04-22 → 2024-02-27 (-55d) | 0d → 37d |
| 88 | Đánh Giá Cuối Cùng | 2024-04-23 → 2024-02-28 (-55d) | 2024-04-23 → 2024-02-28 (-55d) | 0d → 37d |
| 89 | Hoàn Thành Kiểm Thử | 2024-04-23 → 2024-02-28 (-55d) | 2024-04-23 → 2024-02-28 (-55d) | 0d → 37d |
| 90 | **Bàn Giao** | 2024-04-24 → 2024-02-29 (-55d) | 2024-04-25 → 2024-03-01 (-55d) | 0d → 37d |
| 91 | Cài Đặt Phần Mềm | 2024-04-24 → 2024-02-29 (-55d) | 2024-04-24 → 2024-02-29 (-55d) | 0d → 37d |
| 92 | Hướng Dẫn Phầm Mềm | 2024-04-25 → 2024-03-01 (-55d) | 2024-04-25 → 2024-03-01 (-55d) | 0d → 37d |

## Version 6 (saved 2024-03-14)

Note of the change: AI

Last finish stays 2024-04-24.

Added:

| ID | Task | Duration | Start | Finish |
| --- | --- | --- | --- | --- |
| 82 | Hoàn thành triển khai | 0d | 2024-03-15 | 2024-03-15 |

Removed: 82 Hoàn Thành Lập Trình

Changed:

| ID | Task | Predecessors |
| --- | --- | --- |
| 84 | Lập Bảng Kế Hoạch Kiểm Thử | Hoàn Thành Lập Trình → none |
