# QuanTri

How a schedule from MS Project changed from version to version. A marks actual dates.

## Version 1 (saved 2024-03-11)

Note of the change: oanh

| ID | WBS | Task | Duration | Start | Finish | Predecessors | Complete | Total float | Constraint |
| --- | --- | --- | --- | --- | --- | --- | --- | --- | --- |
| 1 | 1 | **XÂY DỰNG HỆ THỐNG QUẢN LÝ KẾT NỐI VÀ CUNG CẤP GIA SƯ TP-HUẾ** | 45d? | 2024-02-21 A | 2024-04-24 |  | 3% | 0d |  |
| 2 |  | Bản kế hoạch dự án | 1d | 2024-02-21 A | 2024-02-21 A |  | 100% |  | finish no earlier than 2024-02-21 |
| 3 |  | Thời gian phê duyệt dự án | 1d | 2024-02-22 A | 2024-02-22 A | 2 | 100% |  | start no earlier than 2024-02-22 |
| 4 | 1.3 | **Phân Tích** | 9d? | 2024-02-21 | 2024-03-05 |  |  | 0d |  |
| 5 | 1.3.1 | **Thu Thập, Phân Tích Nhu Cầu Khách Hàng** | 2d | 2024-02-21 | 2024-02-22 |  |  |  |  |
| 6 | 1.3.1.1 | **Trao đổi, thu nhập yêu cầu khách hàng** | 1d | 2024-02-21 | 2024-02-21 |  |  |  |  |
| 7 |  | Gặp mặt, trao đổi với khách hàng | 1d? | 2024-02-21 | 2024-02-21 |  |  | 0d |  |
| 8 |  | Thu nhập, ghi chú các thông tin, nhu cầu của khách hàng | 1d | 2024-02-21 | 2024-02-21 |  |  | 44d | start no earlier than 2024-02-21 |
| 9 | 1.3.1.2 | **Phân tích nhu cầu khách hàng** | 1d | 2024-02-22 | 2024-02-22 |  |  |  |  |
| 10 |  | Chọn lọc, phân loại các yêu cầu của khách hàng | 1d? | 2024-02-22 | 2024-02-22 |  |  |  |  |
| 11 |  | Xác định các yêu cầu chức năng và phi chức năng | 1d? | 2024-02-22 | 2024-02-22 |  |  |  |  |
| 12 |  | Tổng kết những thông tin đã thu nhập và phân tích được | 0d | 2024-02-22 | 2024-02-22 |  |  |  |  |
| 13 |  | Xác định những yêu cầu đáp ứng được và không đáp ứng được | 1d? | 2024-02-22 | 2024-02-22 |  |  |  |  |
| 14 | 1.3.2 | **Lên Ý Tưởng, Phân Tích Thông Số Kĩ Thuật** | 1d? | 2024-02-22 | 2024-02-23 | 5 |  | 0d |  |
| 15 | 1.3.2.1 | **Tổ chức và lên ý tưởng** | 1d? | 2024-02-22 | 2024-02-23 |  |  | 0d |  |
| 16 |  | Tổ chức họp về việc lên ý tưởng và phân tích thông số kĩ thuật | 1d? | 2024-02-22 | 2024-02-23 |  |  |  |  |
| 17 |  | Xây dựng mô phỏng dự án | 1d? | 2024-02-22 | 2024-02-23 |  |  |  |  |
| 18 | 1.3.2.2 | **Lên kế hoạch chi tiết** | 1d? | 2024-02-22 | 2024-02-23 |  |  | 0d |  |
| 19 |  | Lên kế hoạch chi tiết, dự đoán công việc và người thực hiện dự án | 1d? | 2024-02-22 | 2024-02-23 |  |  |  |  |
| 20 |  | Phân tích ý tưởng | 1d? | 2024-02-22 | 2024-02-23 |  |  |  |  |
| 21 |  | Lập bảng phân rã công việc | 1d? | 2024-02-22 | 2024-02-23 |  |  |  |  |
| 22 | 1.3.2.3 | **Phân tích thông số kỹ thuật** | 1d? | 2024-02-22 | 2024-02-23 |  |  | 0d |  |
| 23 |  | Xác định các yêu cầu kỹ thuật của sản phẩm hoặc hệ thống | 1d? | 2024-02-22 | 2024-02-23 |  |  |  |  |
| 24 |  | Phân tích các thông số kỹ thuật về hiệu suất, dung lượng và độ tin cậy | 1d? | 2024-02-22 | 2024-02-23 |  |  |  |  |
| 25 | 1.3.2.4 | **Tổng kết ý dự án** | 1d? | 2024-02-22 | 2024-02-23 |  |  | 0d |  |
| 26 |  | Tạo ra kế hoạch chi tiết theo như những thông số kỹ thuật đã tìm hiểu | 1d? | 2024-02-22 | 2024-02-23 |  |  |  |  |
| 27 |  | Tổng kết và chốt ý bản kế hoạch đã được phát triển | 1d? | 2024-02-22 | 2024-02-23 |  |  |  |  |
| 28 | 1.3.3 | **Lập Bảng Báo Cáo, Phản Hồi Khách Hàng** | 1d? | 2024-02-23 | 2024-02-26 | 14 |  | 0d |  |
| 29 | 1.3.3.1 | **Lập bảng báo cáo, Phản Hồi Khách Hàng** | 1d? | 2024-02-23 | 2024-02-26 |  |  | 0d |  |
| 30 |  | Lập bảng báo cáo về đặc tả hệ thống chi tiết | 1d? | 2024-02-23 | 2024-02-26 |  |  |  |  |
| 31 |  | Lập bảng báo cáo những ưu và nhược điểm của dự án | 1d? | 2024-02-23 | 2024-02-26 |  |  |  |  |
| 32 |  | Tiến hành kiểm tra và đánh giá bản kế hoạch | 1d? | 2024-02-23 | 2024-02-26 |  |  |  |  |
| 33 | 1.3.3.2 | **Phản hồi khách hàng** | 1d? | 2024-02-23 | 2024-02-26 |  |  | 0d |  |
| 34 |  | Liên hệ với khách hàng để trao đổi về bản dự án dự kiến | 1d? | 2024-02-23 | 2024-02-26 |  |  |  |  |
| 35 |  | Lắng nghe và hiểu rõ ý kiến phản hồi từ khách hàng | 1d? | 2024-02-23 | 2024-02-26 |  |  |  |  |
| 36 |  | Giải quyết mọi thắc mắc và yêu cầu của khách hàng | 1d? | 2024-02-23 | 2024-02-26 |  |  |  |  |
| 37 |  | Chờ Phê Duyệt Để Tiến Hành | 1d | 2024-02-27 | 2024-02-27 | 28 |  | 4d |  |
| 38 |  | Hoàn Thành Phân Tích | 0d | 2024-03-05 | 2024-03-05 | 37 |  |  |  |
| 39 | 1.4 | **Thiết kế** | 8d | 2024-03-05 | 2024-03-15 |  |  | 0d |  |
| 40 |  | Thiết Kế Cấu Trúc Phần Mềm | 2d | 2024-03-05 | 2024-03-06 | 38 |  | 0d |  |
| 41 |  | Thiết Kế Giao Diện | 2d | 2024-03-07 | 2024-03-08 | 40 |  | 0d |  |
| 42 |  | Thiết Kế Cơ Sở Dữ Liệu | 2d | 2024-03-11 | 2024-03-12 | 41 |  | 0d |  |
| 43 |  | Thiết Kế Thành Phần Hệ Thống | 1d | 2024-03-13 | 2024-03-13 | 42 |  | 0d |  |
| 44 |  | Chờ Phê Duyệt Để Tiến Hành | 1d | 2024-03-14 | 2024-03-14 | 43 |  | 0d |  |
| 45 |  | Hoàn Thành Thiết kế | 0d | 2024-03-15 | 2024-03-15 | 44 |  |  |  |
| 46 | 1.5 | **Triển Khai** | 20d | 2024-03-15 | 2024-04-12 |  |  | 0d |  |
| 47 |  | Triển Khai Logic Hệ Thông | 5d | 2024-03-15 | 2024-03-21 | 45 |  | 0d |  |
| 48 |  | Phát Triển Các Thành Phần CSDL | 5d | 2024-03-22 | 2024-03-28 | 47 |  | 0d |  |
| 49 |  | Lập Trình Hệ Thống | 5d | 2024-03-29 | 2024-04-04 | 48 |  | 0d |  |
| 50 |  | Đánh Giá Và Tối Ưu Mã Nguồn | 5d | 2024-04-05 | 2024-04-11 | 49 |  | 0d |  |
| 51 |  | Hoàn Thành Lập Trình | 0d | 2024-04-12 | 2024-04-12 | 50 |  |  |  |
| 52 | 1.6 | **Kiểm Thử** | 6d | 2024-04-12 | 2024-04-23 |  |  | 0d |  |
| 53 |  | Lập Bảng Kế Hoạch Kiểm Thử | 1d | 2024-04-12 | 2024-04-12 | 51 |  | 0d |  |
| 54 |  | Viết Và Tiến Hành Các Ca Kiểm Thử | 1d | 2024-04-15 | 2024-04-15 | 53 |  | 0d |  |
| 55 |  | Kiểm Thử Toàn Hệ Thống | 1d | 2024-04-16 | 2024-04-16 | 54 |  | 0d |  |
| 56 |  | Xác Định Và Sữa Lỗi | 2d | 2024-04-17 | 2024-04-19 | 55 |  | 0d |  |
| 57 |  | Đánh Giá Cuối Cùng | 1d | 2024-04-22 | 2024-04-22 | 56 |  | 0d |  |
| 58 |  | Hoàn Thành Kiểm Thử | 0d | 2024-04-23 | 2024-04-23 | 57 |  |  |  |
| 59 | 1.7 | **Bàn Giao** | 2d | 2024-04-23 | 2024-04-24 |  |  | 0d |  |
| 60 |  | Cài Đặt Phần Mềm | 1d | 2024-04-23 | 2024-04-23 | 58 |  | 0d |  |
| 61 |  | Hướng Dẫn Phầm Mềm | 1d | 2024-04-24 | 2024-04-24 | 60 |  | 0d |  |

## Version 2 (saved 2024-03-13)

Note of the change: Merge branch 'main' of https://github.com/huy1133/KD

Last finish stays 2024-04-24.

Added:

| ID | Task | Duration | Start | Finish |
| --- | --- | --- | --- | --- |
| 20 | **Phân tích phi chức năng** | 1d? | 2024-02-21 | 2024-02-21 |
| 21 | Xác định các yêu cầu, như tiêu chuẩn về hiệu suất, bảo mật và giao diện người dùng | 1d? | 2024-02-21 | 2024-02-21 |
| 25 | **Phân tích giao diện** | 1d? | 2024-02-21 | 2024-02-21 |
| 26 | Lên ý tưởng về giao diện theo yêu cầu khách | 1d? | 2024-02-21 | 2024-02-21 |
| 27 | **Xác định rủi ro** | 1d? | 2024-02-21 | 2024-02-21 |
| 28 | Phân tích các rủi ro tiềm ẩn trong dự án và đề xuất các biện pháp phòng ngừa | 1d? | 2024-02-21 | 2024-02-21 |
| 29 | Xác định các vấn đề có thể phát sinh và các giải pháp giảm thiểu tác động của chúng | 1d? | 2024-02-21 | 2024-02-21 |
| 30 | **Lập kế hoạch và ước lượng công việc** | 1d? | 2024-02-21 | 2024-02-21 |
| 31 | Phân tích công việc cần thực hiện và ước lượng thời gian và nguồn lực cần thiết | 1d? | 2024-02-21 | 2024-02-21 |
| 32 | Lập bản phân rã công việc | 1d? | 2024-02-21 | 2024-02-21 |

Removed: 20 Phân tích ý tưởng; 21 Lập bảng phân rã công việc; 25 Tổng kết ý dự án; 26 Tạo ra kế hoạch chi tiết theo như những thông số kỹ thuật đã tìm hiểu; 27 Tổng kết và chốt ý bản kế hoạch đã được phát triển; 32 Tiến hành kiểm tra và đánh giá bản kế hoạch; 33 Phản hồi khách hàng; 34 Liên hệ với khách hàng để trao đổi về bản dự án dự kiến; 35 Lắng nghe và hiểu rõ ý kiến phản hồi từ khách hàng; 36 Giải quyết mọi thắc mắc và yêu cầu của khách hàng

Changed:

| ID | Task | Start | Finish | Duration | Complete | Total float | Other |
| --- | --- | --- | --- | --- | --- | --- | --- |
| 1 | **XÂY DỰNG HỆ THỐNG QUẢN LÝ KẾT NỐI VÀ CUNG CẤP GIA SƯ TP-HUẾ** |  |  |  | 3% → 4% |  |  |
| 4 | **Phân Tích** |  | 2024-03-05 → 2024-02-23 (-11d) | 9d? → 3d? |  | 0d → -0.5d |  |
| 5 | **Thu Thập, Phân Tích Nhu Cầu Khách Hàng** |  | 2024-02-22 → 2024-02-21 (-1d) | 2d → 0d |  |  |  |
| 6 | **Trao đổi, thu nhập yêu cầu khách hàng** |  |  | 1d → 0d |  |  |  |
| 7 | Gặp mặt, trao đổi với khách hàng |  |  | 1d? → 0.5d |  | 0d → -0.5d |  |
| 8 | Thu nhập, ghi chú các thông tin, nhu cầu của khách hàng |  |  | 1d → 0.5d |  | 44d → 44.5d |  |
| 9 | **Phân tích nhu cầu khách hàng** |  |  | 1d → 0d |  |  |  |
| 10 | Chọn lọc, phân loại các yêu cầu của khách hàng |  |  | 1d? → 0d |  | none → 43d | constraint none → finish no earlier than 2024-02-22 |
| 11 | Xác định các yêu cầu chức năng và phi chức năng |  |  | 1d? → 0d |  | none → 0d |  |
| 12 | Tổng kết những thông tin đã thu nhập và phân tích |  |  |  |  | none → 0d | was named Tổng kết những thông tin đã thu nhập và phân tích được |
| 13 | Xác định những yêu cầu đáp ứng được và không đáp ứng được |  |  | 1d? → 0d |  | none → 0d |  |
| 14 | **Lên ý tưởng, Phân tích cấu trúc phần mềm, phi chức năng, thông số kỹ thuật, giao diện, xác định rủi ro, ước lượng công việc** | 2024-02-22 → 2024-02-21 (-1d) | 2024-02-23 → 2024-02-21 (-2d) |  |  | 0d → 2d | was named Lên Ý Tưởng, Phân Tích Thông Số Kĩ Thuật |
| 15 | **Tổ chức và lên ý tưởng** | 2024-02-22 → 2024-02-21 (-1d) | 2024-02-23 → 2024-02-21 (-2d) |  |  | 0d → 2d |  |
| 16 | Tổ chức họp đội ngũ trong việc lên ý tưởng | 2024-02-22 → 2024-02-21 (-1d) | 2024-02-23 → 2024-02-21 (-2d) |  |  | none → 2d | was named Tổ chức họp về việc lên ý tưởng và phân tích thông số kĩ thuật |
| 17 | Xây dựng mô phỏng dự án | 2024-02-22 → 2024-02-21 (-1d) | 2024-02-23 → 2024-02-21 (-2d) |  |  | none → 2d |  |
| 18 | **Phân tích cấu trúc phần mềm** | 2024-02-22 → 2024-02-21 (-1d) | 2024-02-23 → 2024-02-21 (-2d) |  |  | 0d → 2d | was named Lên kế hoạch chi tiết |
| 19 | Xác định và mô tả các chức năng cần thiết của hệ thống | 2024-02-22 → 2024-02-21 (-1d) | 2024-02-23 → 2024-02-21 (-2d) |  |  | none → 2d | was named Lên kế hoạch chi tiết, dự đoán công việc và người thực hiện dự án |
| 22 | **Phân tích thông số kỹ thuật** | 2024-02-22 → 2024-02-21 (-1d) | 2024-02-23 → 2024-02-21 (-2d) |  |  | 0d → 2d |  |
| 23 | Xác định các yêu cầu kỹ thuật của hệ thống | 2024-02-22 → 2024-02-21 (-1d) | 2024-02-23 → 2024-02-21 (-2d) |  |  | none → 2d | was named Xác định các yêu cầu kỹ thuật của sản phẩm hoặc hệ thống |
| 24 | Phân tích các thông số kỹ thuật về hiệu suất, dung lượng và độ tin cậy | 2024-02-22 → 2024-02-21 (-1d) | 2024-02-23 → 2024-02-21 (-2d) |  |  | none → 2d |  |
| 33 | **Lập Bảng Báo Cáo, Phản Hồi Khách Hàng** | 2024-02-23 → 2024-02-21 (-2d) | 2024-02-26 → 2024-02-22 (-4d) |  |  | 0d → 2d |  |
| 34 | **Lập bảng báo cáo, Phản Hồi Khách Hàng** | 2024-02-23 → 2024-02-21 (-2d) | 2024-02-26 → 2024-02-22 (-4d) |  |  | 0d → 2d |  |
| 35 | Tạo tài liệu báo cáo về quá trình, các kết quả đạt được, và kế hoạch cho giai đoạn tiếp theo của dự án | 2024-02-23 → 2024-02-21 (-2d) | 2024-02-26 → 2024-02-22 (-4d) |  |  |  | was named Lập bảng báo cáo về đặc tả hệ thống chi tiết |
| 36 | Liên hệ với khách hàng để trao đổi và xác nhận rằng phần mềm đã được thiết kế đáp ứng được mong muốn của khách hàng | 2024-02-23 → 2024-02-21 (-2d) | 2024-02-26 → 2024-02-22 (-4d) |  |  |  | was named Lập bảng báo cáo những ưu và nhược điểm của dự án |
| 37 | Chờ Phê Duyệt Để Tiến Hành | 2024-02-27 → 2024-02-23 (-4d) | 2024-02-27 → 2024-02-23 (-4d) |  |  | 4d → 6d |  |
| 38 | Hoàn Thành Phân Tích | 2024-03-05 → 2024-02-23 (-11d) | 2024-03-05 → 2024-02-23 (-11d) |  |  | none → 6d |  |
| 39 | **Thiết kế** | 2024-03-05 → 2024-02-26 (-8d) |  | 8d → 14d |  |  |  |
| 40 | Thiết Kế Cấu Trúc Phần Mềm | 2024-03-05 → 2024-02-26 (-8d) | 2024-03-06 → 2024-02-27 (-8d) |  |  | 0d → 6d |  |
| 41 | Thiết Kế Giao Diện | 2024-03-07 → 2024-02-28 (-8d) | 2024-03-08 → 2024-02-29 (-8d) |  |  | 0d → 6d |  |
| 42 | Thiết Kế Cơ Sở Dữ Liệu | 2024-03-11 → 2024-03-01 (-10d) | 2024-03-12 → 2024-03-04 (-8d) |  |  | 0d → 6d |  |
| 43 | Thiết Kế Thành Phần Hệ Thống | 2024-03-13 → 2024-03-05 (-8d) | 2024-03-13 → 2024-03-05 (-8d) |  |  | 0d → 6d |  |
| 44 | Chờ Phê Duyệt Để Tiến Hành | 2024-03-14 → 2024-03-06 (-8d) | 2024-03-14 → 2024-03-06 (-8d) |  |  | 0d → 6d |  |
| 46 | **Triển Khai** |  | 2024-04-12 → 2024-04-11 (-1d) |  |  |  |  |
| 51 | Hoàn Thành Lập Trình | 2024-04-12 → 2024-04-11 (-1d) | 2024-04-12 → 2024-04-11 (-1d) |  |  | none → 0d |  |
| 52 | **Kiểm Thử** |  | 2024-04-23 → 2024-04-22 (-1d) |  |  |  |  |
| 58 | Hoàn Thành Kiểm Thử | 2024-04-23 → 2024-04-22 (-1d) | 2024-04-23 → 2024-04-22 (-1d) |  |  | none → 0d |  |

## Version 3 (saved 2024-03-14)

Note of the change: Merge branch 'main' of https://github.com/huy1133/KD

Last finish stays 2024-04-24.

Added:

| ID | Task | Duration | Start | Finish | Predecessors | Resources |
| --- | --- | --- | --- | --- | --- | --- |
| 20 | Tạo biểu đồ use case và mô tả chi tiết các yêu cầu chức năng | 1d | 2024-02-29 | 2024-02-29 | 19 | Đỗ Thị Diệu Ái - Phân Tích Viên 2; Hoàng Thị Kiều Oanh - Phân Tích Viên 3 |

Changed:

| ID | Task | Start | Finish | Duration | Total float | Predecessors | Other |
| --- | --- | --- | --- | --- | --- | --- | --- |
| 1 | **XÂY DỰNG HỆ THỐNG QUẢN LÝ KẾT NỐI VÀ CUNG CẤP GIA SƯ TP-HUẾ** |  |  | 45d? → 45d |  |  |  |
| 4 | **Phân Tích** | 2024-02-21 → 2024-02-23 (+2d) | 2024-02-23 → 2024-03-14 (+20d) | 3d? → 15d | -0.5d → -8d |  |  |
| 5 | **Thu Thập, Phân Tích Nhu Cầu Khách Hàng** | 2024-02-21 → 2024-02-23 (+2d) | 2024-02-21 → 2024-02-26 (+5d) | 0d → 2d | none → -8d |  | resources Hoàng Thanh Tùng - Phân Tích Viên 1; Đỗ Thị Diệu Ái - Phân Tích Viên 2 → none |
| 6 | **Trao đổi, thu nhập yêu cầu khách hàng** | 2024-02-21 → 2024-02-23 (+2d) | 2024-02-21 → 2024-02-23 (+2d) | 0d → 1d | none → -8d |  |  |
| 7 | Gặp mặt, trao đổi với khách hàng | 2024-02-21 → 2024-02-23 (+2d) | 2024-02-21 → 2024-02-23 (+2d) |  | -0.5d → -8d | none → 3 | resources none → Hoàng Thị Kiều Oanh - Phân Tích Viên 3 |
| 8 | Thu nhập, ghi chú các thông tin, nhu cầu của khách hàng | 2024-02-21 → 2024-02-23 (+2d) | 2024-02-21 → 2024-02-23 (+2d) |  | 44.5d → -8d | none → 7 | resources none → Hoàng Thị Kiều Oanh - Phân Tích Viên 3 |
| 9 | **Phân tích nhu cầu khách hàng** | 2024-02-22 → 2024-02-26 (+4d) | 2024-02-22 → 2024-02-26 (+4d) | 0d → 1d | none → -8d |  |  |
| 10 | Chọn lọc, phân loại các yêu cầu của khách hàng | 2024-02-22 → 2024-02-26 (+4d) | 2024-02-22 → 2024-02-26 (+4d) | 0d → 3h | 43d → -8d | none → 8 | constraint finish no earlier than 2024-02-22 → none; resources none → Hoàng Thị Kiều Oanh - Phân Tích Viên 3; Đỗ Thị Diệu Ái - Phân Tích Viên 2 |
| 11 | Xác định các yêu cầu chức năng và phi chức năng | 2024-02-22 → 2024-02-26 (+4d) | 2024-02-22 → 2024-02-26 (+4d) | 0d → 2.5h | 0d → -8d | none → 10 | resources none → Đỗ Thị Diệu Ái - Phân Tích Viên 2; Hoàng Thị Kiều Oanh - Phân Tích Viên 3 |
| 12 | Tổng kết những thông tin đã thu nhập và phân tích | 2024-02-22 → 2024-02-26 (+4d) | 2024-02-22 → 2024-02-26 (+4d) | 0d → 1.5h | 0d → -8d | none → 11 | resources none → Đỗ Thị Diệu Ái - Phân Tích Viên 2 |
| 13 | Xác định những yêu cầu đáp ứng được và không đáp ứng được | 2024-02-22 → 2024-02-26 (+4d) | 2024-02-22 → 2024-02-26 (+4d) | 0d → 1h | 0d → -8d | none → 12 | resources none → Hoàng Thị Kiều Oanh - Phân Tích Viên 3 |
| 14 | **Lên ý tưởng, Phân tích cấu trúc phần mềm, phi chức năng, thông số kỹ thuật, giao diện, xác định rủi ro, ước lượng công việc** | 2024-02-21 → 2024-02-27 (+6d) | 2024-02-21 → 2024-03-11 (+19d) | 1d? → 10d | 2d → -8d | 5 → none | resources Hoàng Thanh Tùng - Phân Tích Viên 1; Đỗ Thị Diệu Ái - Phân Tích Viên 2 → none |
| 15 | **Tổ chức và lên ý tưởng** | 2024-02-21 → 2024-02-27 (+6d) | 2024-02-21 → 2024-02-27 (+6d) | 1d? → 1d | 2d → -8d |  |  |
| 16 | Tổ chức họp đội ngũ trong việc lên ý tưởng | 2024-02-21 → 2024-02-27 (+6d) | 2024-02-21 → 2024-02-27 (+6d) | 1d? → 0.4d | 2d → -8d | none → 13 | resources none → Đỗ Thị Diệu Ái - Phân Tích Viên 2; Hoàng Thanh Tùng - Phân Tích Viên 1; Hoàng Thị Kiều Oanh - Phân Tích Viên 3 |
| 17 | Xây dựng mô phỏng dự án | 2024-02-21 → 2024-02-27 (+6d) | 2024-02-21 → 2024-02-27 (+6d) | 1d? → 0.6d | 2d → -8d | none → 16 | resources none → Đỗ Thị Diệu Ái - Phân Tích Viên 2; Hoàng Thanh Tùng - Phân Tích Viên 1; Hoàng Thị Kiều Oanh - Phân Tích Viên 3 |
| 18 | **Phân tích cấu trúc phần mềm** | 2024-02-21 → 2024-02-28 (+7d) | 2024-02-21 → 2024-02-29 (+8d) | 1d? → 2d | 2d → -8d |  |  |
| 19 | Xác định và mô tả các chức năng cần thiết của hệ thống | 2024-02-21 → 2024-02-28 (+7d) | 2024-02-21 → 2024-02-28 (+7d) | 1d? → 1d | 2d → -8d | none → 17 | resources none → Đỗ Thị Diệu Ái - Phân Tích Viên 2; Hoàng Thị Kiều Oanh - Phân Tích Viên 3 |
| 21 | **Phân tích phi chức năng** | 2024-02-21 → 2024-03-01 (+9d) | 2024-02-21 → 2024-03-01 (+9d) | 1d? → 1d | 2d → -8d |  |  |
| 22 | Xác định các yêu cầu, như tiêu chuẩn về hiệu suất, bảo mật và giao diện người dùng | 2024-02-21 → 2024-03-01 (+9d) | 2024-02-21 → 2024-03-01 (+9d) | 1d? → 1d | 2d → -8d | none → 20 | resources none → Hoàng Thanh Tùng - Phân Tích Viên 1 |
| 23 | **Phân tích thông số kỹ thuật** | 2024-02-21 → 2024-03-04 (+12d) | 2024-02-21 → 2024-03-04 (+12d) | 1d? → 1d | 2d → -8d |  |  |
| 24 | Xác định các yêu cầu kỹ thuật của hệ thống | 2024-02-21 → 2024-03-04 (+12d) | 2024-02-21 → 2024-03-04 (+12d) | 1d? → 0.3d | 2d → -8d | none → 22 | resources none → Đỗ Thị Diệu Ái - Phân Tích Viên 2; Hoàng Thanh Tùng - Phân Tích Viên 1 |
| 25 | Phân tích các thông số kỹ thuật về hiệu suất, dung lượng và độ tin cậy | 2024-02-21 → 2024-03-04 (+12d) | 2024-02-21 → 2024-03-04 (+12d) | 1d? → 0.7d | 2d → -8d | none → 24 | resources none → Đỗ Thị Diệu Ái - Phân Tích Viên 2; Hoàng Thanh Tùng - Phân Tích Viên 1 |
| 26 | **Phân tích giao diện** | 2024-02-21 → 2024-03-05 (+13d) | 2024-02-21 → 2024-03-05 (+13d) | 1d? → 1d | 2d → -8d |  |  |
| 27 | Lên ý tưởng về giao diện theo yêu cầu khách | 2024-02-21 → 2024-03-05 (+13d) | 2024-02-21 → 2024-03-05 (+13d) | 1d? → 1d | 2d → -8d | none → 25 | resources none → Hoàng Thị Kiều Oanh - Phân Tích Viên 3 |
| 28 | **Xác định rủi ro** | 2024-02-21 → 2024-03-06 (+14d) | 2024-02-21 → 2024-03-07 (+15d) | 1d? → 2d | 2d → -8d |  |  |
| 29 | Phân tích các rủi ro tiềm ẩn trong dự án và đề xuất các biện pháp phòng ngừa | 2024-02-21 → 2024-03-06 (+14d) | 2024-02-21 → 2024-03-07 (+15d) | 1d? → 1.4d | 2d → -8d | none → 27 | resources none → Đỗ Thị Diệu Ái - Phân Tích Viên 2; Hoàng Thanh Tùng - Phân Tích Viên 1; Hoàng Thị Kiều Oanh - Phân Tích Viên 3 |
| 30 | Xác định các vấn đề có thể phát sinh và các giải pháp giảm thiểu tác động của chúng | 2024-02-21 → 2024-03-07 (+15d) | 2024-02-21 → 2024-03-07 (+15d) | 1d? → 0.6d | 2d → -8d | none → 29 | resources none → Đỗ Thị Diệu Ái - Phân Tích Viên 2; Hoàng Thanh Tùng - Phân Tích Viên 1; Hoàng Thị Kiều Oanh - Phân Tích Viên 3 |
| 31 | **Lập kế hoạch và ước lượng công việc** | 2024-02-21 → 2024-03-08 (+16d) | 2024-02-21 → 2024-03-11 (+19d) | 1d? → 2d | 2d → -8d |  |  |
| 32 | Phân tích công việc cần thực hiện và ước lượng thời gian và nguồn lực cần thiết | 2024-02-21 → 2024-03-08 (+16d) | 2024-02-21 → 2024-03-11 (+19d) | 1d? → 1.5d | 2d → -8d | none → 30 | resources none → Hoàng Thanh Tùng - Phân Tích Viên 1; Hoàng Thị Kiều Oanh - Phân Tích Viên 3 |
| 33 | Lập bản phân rã công việc | 2024-02-21 → 2024-03-11 (+19d) | 2024-02-21 → 2024-03-11 (+19d) | 1d? → 0.5d | 2d → -8d | none → 32 | resources none → Hoàng Thanh Tùng - Phân Tích Viên 1; Hoàng Thị Kiều Oanh - Phân Tích Viên 3 |
| 34 | **Lập Bảng Báo Cáo, Phản Hồi Khách Hàng** | 2024-02-21 → 2024-03-12 (+20d) | 2024-02-22 → 2024-03-13 (+20d) | 1d? → 2d | 2d → -8d |  |  |
| 35 | **Lập bảng báo cáo, Phản Hồi Khách Hàng** | 2024-02-21 → 2024-03-12 (+20d) | 2024-02-22 → 2024-03-13 (+20d) | 1d? → 2d | 2d → -8d |  |  |
| 36 | Tạo tài liệu báo cáo về quá trình, các kết quả đạt được, và kế hoạch cho giai đoạn tiếp theo của dự án | 2024-02-21 → 2024-03-12 (+20d) | 2024-02-22 → 2024-03-12 (+19d) | 1d? → 1d | none → -8d | none → 33 | resources none → Đỗ Thị Diệu Ái - Phân Tích Viên 2; Hoàng Thanh Tùng - Phân Tích Viên 1; Hoàng Thị Kiều Oanh - Phân Tích Viên 3 |
| 37 | Liên hệ với khách hàng để trao đổi và xác nhận rằng phần mềm đã được thiết kế đáp ứng được mong muốn của khách hàng | 2024-02-21 → 2024-03-13 (+21d) | 2024-02-22 → 2024-03-13 (+20d) | 1d? → 1d | none → -8d | none → 36 | resources none → Hoàng Thị Kiều Oanh - Phân Tích Viên 3 |
| 38 | Chờ Phê Duyệt Để Tiến Hành | 2024-02-23 → 2024-03-14 (+20d) | 2024-02-23 → 2024-03-14 (+20d) |  | 6d → -8d |  |  |
| 39 | Hoàn Thành Phân Tích | 2024-02-23 → 2024-03-14 (+20d) | 2024-02-23 → 2024-03-14 (+20d) |  | 6d → -8d |  |  |
| 40 | **Thiết kế** | 2024-02-26 → 2024-03-15 (+18d) | 2024-03-15 → 2024-03-26 (+11d) | 14d → 8d | 0d → -8d |  |  |
| 41 | Thiết Kế Cấu Trúc Phần Mềm | 2024-02-26 → 2024-03-15 (+18d) | 2024-02-27 → 2024-03-18 (+20d) |  | 6d → -8d |  |  |
| 42 | Thiết Kế Giao Diện | 2024-02-28 → 2024-03-19 (+20d) | 2024-02-29 → 2024-03-20 (+20d) |  | 6d → -8d |  |  |
| 43 | Thiết Kế Cơ Sở Dữ Liệu | 2024-03-01 → 2024-03-21 (+20d) | 2024-03-04 → 2024-03-22 (+18d) |  | 6d → -8d |  |  |
| 44 | Thiết Kế Thành Phần Hệ Thống | 2024-03-05 → 2024-03-25 (+20d) | 2024-03-05 → 2024-03-25 (+20d) |  | 6d → -8d |  |  |
| 45 | Chờ Phê Duyệt Để Tiến Hành | 2024-03-06 → 2024-03-26 (+20d) | 2024-03-06 → 2024-03-26 (+20d) |  | 6d → -8d |  |  |

## Version 4 (saved 2024-04-18)

Note of the change: Có update

Last finish stays 2024-04-24.

Removed: 24 Xác định các yêu cầu kỹ thuật của hệ thống; 35 Lập bảng báo cáo, Phản Hồi Khách Hàng

Changed:

| ID | Task | Start | Finish | Duration | Complete | Total float | Predecessors |
| --- | --- | --- | --- | --- | --- | --- | --- |
| 1 | **XÂY DỰNG HỆ THỐNG QUẢN LÝ KẾT NỐI VÀ CUNG CẤP GIA SƯ TP-HUẾ** |  |  |  | 4% → 3% |  |  |
| 4 | **Phân Tích** | 2024-02-23 → 2024-02-21 (-2d) | 2024-03-14 → 2024-03-11 (-3d) | 15d → 14d |  | -8d → -4d |  |
| 5 | **Thu Thập, Phân Tích Nhu Cầu Khách Hàng** |  | 2024-02-26 → 2024-02-29 (+3d) | 2d → 5d |  | -8d → 31d |  |
| 6 | **Trao đổi, thu nhập yêu cầu khách hàng** |  | 2024-02-23 → 2024-02-26 (+3d) | 1d → 2d |  | -8d → 31d |  |
| 7 | Gặp mặt, trao đổi với khách hàng |  |  | 0.5d → 1d |  | -8d → 31d |  |
| 8 | Thu nhập, ghi chú các thông tin, nhu cầu của khách hàng | 2024-02-23 → 2024-02-26 (+3d) | 2024-02-23 → 2024-02-26 (+3d) | 0.5d → 1d |  | -8d → 31d |  |
| 9 | **Phân tích nhu cầu khách hàng** | 2024-02-26 → 2024-02-27 (+1d) | 2024-02-26 → 2024-02-29 (+3d) | 1d → 3d |  | -8d → 31d |  |
| 10 | Chọn lọc, phân loại các yêu cầu của khách hàng | 2024-02-26 → 2024-02-27 (+1d) | 2024-02-26 → 2024-02-27 (+1d) | 3h → 1d |  | -8d → 31d |  |
| 11 | Xác định các yêu cầu chức năng và phi chức năng | 2024-02-26 → 2024-02-28 (+2d) | 2024-02-26 → 2024-02-28 (+2d) | 2.5h → 1d |  | -8d → 31d |  |
| 12 | Tổng kết những thông tin đã thu nhập và phân tích | 2024-02-26 → 2024-02-29 (+3d) | 2024-02-26 → 2024-02-29 (+3d) | 1.5h → 1d |  | -8d → 38d |  |
| 13 | Xác định những yêu cầu đáp ứng được và không đáp ứng được | 2024-02-26 → 2024-02-29 (+3d) | 2024-02-26 → 2024-02-29 (+3d) | 1h → 1d |  | -8d → 31d | 12 → 11 |
| 14 | **Lên ý tưởng, Phân tích cấu trúc phần mềm, phi chức năng, thông số kỹ thuật, giao diện, xác định rủi ro, ước lượng công việc** | 2024-02-27 → 2024-02-21 (-6d) |  | 10d → 14d |  | -8d → -4d |  |
| 15 | **Tổ chức và lên ý tưởng** | 2024-02-27 → 2024-03-01 (+3d) | 2024-02-27 → 2024-03-05 (+7d) | 1d → 3d |  | -8d → 31d |  |
| 16 | Tổ chức họp đội ngũ trong việc lên ý tưởng | 2024-02-27 → 2024-03-01 (+3d) | 2024-02-27 → 2024-03-04 (+6d) | 0.4d → 2d |  | -8d → 31d |  |
| 17 | Xây dựng mô phỏng dự án | 2024-02-27 → 2024-03-05 (+7d) | 2024-02-27 → 2024-03-05 (+7d) | 0.6d → 1d |  | -8d → 31d |  |
| 18 | **Phân tích cấu trúc phần mềm** | 2024-02-28 → 2024-03-06 (+7d) | 2024-02-29 → 2024-03-07 (+7d) |  |  | -8d → 31d |  |
| 19 | Xác định và mô tả các chức năng cần thiết của hệ thống | 2024-02-28 → 2024-03-06 (+7d) | 2024-02-28 → 2024-03-06 (+7d) |  |  | -8d → 31d |  |
| 20 | Tạo biểu đồ use case và mô tả chi tiết các yêu cầu chức năng | 2024-02-29 → 2024-03-07 (+7d) | 2024-02-29 → 2024-03-07 (+7d) |  |  | -8d → 31d |  |
| 21 | **Phân tích phi chức năng** | 2024-03-01 → 2024-03-08 (+7d) | 2024-03-01 → 2024-03-11 (+10d) | 1d → 2d |  | -8d → 31d |  |
| 22 | Xác định các yêu cầu, như tiêu chuẩn về hiệu suất, bảo mật và giao diện người dùng | 2024-03-01 → 2024-03-08 (+7d) | 2024-03-01 → 2024-03-11 (+10d) | 1d → 2d |  | -8d → 31d |  |
| 23 | **Phân tích thông số kỹ thuật** | 2024-03-04 → 2024-02-21 (-12d) | 2024-03-04 → 2024-02-22 (-11d) | 1d → 2d |  | -8d → -4d |  |
| 24 | Phân tích các thông số kỹ thuật về hiệu suất, dung lượng và độ tin cậy | 2024-03-04 → 2024-02-21 (-12d) | 2024-03-04 → 2024-02-22 (-11d) | 0.7d → 2d |  | -8d → -4d | Xác định các yêu cầu kỹ thuật của hệ thống → none |
| 25 | **Phân tích giao diện** | 2024-03-05 → 2024-02-23 (-11d) | 2024-03-05 → 2024-02-26 (-8d) | 1d → 2d |  | -8d → -4d |  |
| 26 | Lên ý tưởng về giao diện theo yêu cầu khách | 2024-03-05 → 2024-02-23 (-11d) | 2024-03-05 → 2024-02-26 (-8d) | 1d → 2d |  | -8d → -4d |  |
| 27 | **Xác định rủi ro** | 2024-03-06 → 2024-02-27 (-8d) | 2024-03-07 → 2024-02-29 (-7d) | 2d → 3d |  | -8d → -4d |  |
| 28 | Phân tích các rủi ro tiềm ẩn trong dự án và đề xuất các biện pháp phòng ngừa | 2024-03-06 → 2024-02-27 (-8d) | 2024-03-07 → 2024-02-28 (-8d) | 1.4d → 2d |  | -8d → -4d |  |
| 29 | Xác định các vấn đề có thể phát sinh và các giải pháp giảm thiểu tác động của chúng | 2024-03-07 → 2024-02-29 (-7d) | 2024-03-07 → 2024-02-29 (-7d) | 0.6d → 1d |  | -8d → -4d |  |
| 30 | **Lập kế hoạch và ước lượng công việc** | 2024-03-08 → 2024-03-01 (-7d) | 2024-03-11 → 2024-03-05 (-6d) | 2d → 3d |  | -8d → -4d |  |
| 31 | Phân tích công việc cần thực hiện và ước lượng thời gian và nguồn lực cần thiết | 2024-03-08 → 2024-03-01 (-7d) | 2024-03-11 → 2024-03-04 (-7d) | 1.5d → 2d |  | -8d → -4d |  |
| 32 | Lập bản phân rã công việc | 2024-03-11 → 2024-03-05 (-6d) | 2024-03-11 → 2024-03-05 (-6d) | 0.5d → 1d |  | -8d → -4d |  |
| 33 | **Lập Bảng Báo Cáo, Phản Hồi Khách Hàng** | 2024-03-12 → 2024-03-06 (-6d) | 2024-03-13 → 2024-03-07 (-6d) |  |  | -8d → -4d | 14 → none |
| 34 | Tạo tài liệu báo cáo về quá trình, các kết quả đạt được, và kế hoạch cho giai đoạn tiếp theo của dự án | 2024-03-12 → 2024-03-06 (-6d) | 2024-03-12 → 2024-03-06 (-6d) |  |  | -8d → -4d |  |
| 35 | Liên hệ với khách hàng để trao đổi và xác nhận rằng phần mềm đã được thiết kế đáp ứng được mong muốn của khách hàng | 2024-03-13 → 2024-03-07 (-6d) | 2024-03-13 → 2024-03-07 (-6d) |  |  | -8d → -4d |  |
| 36 | Chờ Phê Duyệt Để Tiến Hành | 2024-03-14 → 2024-03-08 (-6d) | 2024-03-14 → 2024-03-08 (-6d) |  |  | -8d → -4d |  |
| 37 | Hoàn Thành Phân Tích | 2024-03-14 → 2024-03-08 (-6d) | 2024-03-14 → 2024-03-08 (-6d) |  |  | -8d → -4d |  |
| 38 | **Thiết kế** | 2024-03-15 → 2024-03-11 (-4d) | 2024-03-26 → 2024-03-20 (-6d) |  |  | -8d → -4d |  |
| 39 | Thiết Kế Cấu Trúc Phần Mềm | 2024-03-15 → 2024-03-11 (-4d) | 2024-03-18 → 2024-03-12 (-6d) |  |  | -8d → -4d |  |
| 40 | Thiết Kế Giao Diện | 2024-03-19 → 2024-03-13 (-6d) | 2024-03-20 → 2024-03-14 (-6d) |  |  | -8d → -4d |  |
| 41 | Thiết Kế Cơ Sở Dữ Liệu | 2024-03-21 → 2024-03-15 (-6d) | 2024-03-22 → 2024-03-18 (-4d) |  |  | -8d → -4d |  |
| 42 | Thiết Kế Thành Phần Hệ Thống | 2024-03-25 → 2024-03-19 (-6d) | 2024-03-25 → 2024-03-19 (-6d) |  |  | -8d → -4d |  |
| 43 | Chờ Phê Duyệt Để Tiến Hành | 2024-03-26 → 2024-03-20 (-6d) | 2024-03-26 → 2024-03-20 (-6d) |  |  | -8d → -4d |  |
