# temp

How a schedule from MS Project changed from version to version. A marks actual dates.

## Version 1 (saved 2024-03-09)

Note of the change: huy

| ID | WBS | Task | Duration | Start | Finish | Predecessors | Complete | Total float | Constraint |
| --- | --- | --- | --- | --- | --- | --- | --- | --- | --- |
| 1 | 1 | **XÂY DỰNG HỆ THỐNG QUẢN LÝ KẾT NỐI VÀ CUNG CẤP GIA SƯ TP-HUẾ** | 45d | 2024-02-21 A | 2024-04-24 |  | 4% | 0d |  |
| 2 |  | Bản kế hoạch dự án | 1d | 2024-02-21 A | 2024-02-21 A |  | 100% |  | finish no earlier than 2024-02-21 |
| 3 |  | Thời gian phê duyệt dự án | 1d | 2024-02-22 A | 2024-02-22 A | 2 | 100% |  | start no earlier than 2024-02-22 |
| 4 | 1.3 | **Phân Tích** | 9d | 2024-02-21 | 2024-03-05 |  |  | 0d |  |
| 5 |  | Thu Thập, Phân Tích Nhu Cầu Khách Hàng | 3d | 2024-02-21 | 2024-02-23 |  |  | 0d |  |
| 6 |  | Lên Ý Tưởng, Phân Tích Thông Số Kĩ Thuật | 3d | 2024-02-26 | 2024-02-28 | 5 |  | 0d |  |
| 7 |  | Lập Bảng Báo Cáo, Phản Hồi Khách Hàng | 2d | 2024-02-29 | 2024-03-01 | 6 |  | 0d |  |
| 8 |  | Chờ Phê Duyệt Để Tiến Hành | 1d | 2024-03-04 | 2024-03-04 | 7 |  | 0d |  |
| 9 |  | Hoàn Thành Phân Tích | 0d | 2024-03-05 | 2024-03-05 | 8 |  |  |  |
| 10 | 1.4 | **Thiết kế** | 8d | 2024-03-05 | 2024-03-15 |  |  | 0d |  |
| 11 |  | Thiết Kế Cấu Trúc Phần Mềm | 2d | 2024-03-05 | 2024-03-06 | 9 |  | 0d |  |
| 12 |  | Thiết Kế Giao Diện | 2d | 2024-03-07 | 2024-03-08 | 11 |  | 0d |  |
| 13 |  | Thiết Kế Cơ Sở Dữ Liệu | 2d | 2024-03-11 | 2024-03-12 | 12 |  | 0d |  |
| 14 |  | Thiết Kế Thành Phần Hệ Thống | 1d | 2024-03-13 | 2024-03-13 | 13 |  | 0d |  |
| 15 |  | Chờ Phê Duyệt Để Tiến Hành | 1d | 2024-03-14 | 2024-03-14 | 14 |  | 0d |  |
| 16 |  | Hoàn Thành Thiết kế | 0d | 2024-03-15 | 2024-03-15 | 15 |  |  |  |
| 17 | 1.5 | **Triển Khai** | 20d | 2024-03-15 | 2024-04-12 |  |  | 0d |  |
| 18 |  | Triển Khai Logic Hệ Thông | 5d | 2024-03-15 | 2024-03-21 | 16 |  | 0d |  |
| 19 |  | Phát Triển Các Thành Phần CSDL | 5d | 2024-03-22 | 2024-03-28 | 18 |  | 0d |  |
| 20 |  | Lập Trình Hệ Thống | 5d | 2024-03-29 | 2024-04-04 | 19 |  | 0d |  |
| 21 |  | Đánh Giá Và Tối Ưu Mã Nguồn | 5d | 2024-04-05 | 2024-04-11 | 20 |  | 0d |  |
| 22 |  | Hoàn Thành Lập Trình | 0d | 2024-04-12 | 2024-04-12 | 21 |  |  |  |
| 23 | 1.6 | **Kiểm Thử** | 6d | 2024-04-12 | 2024-04-23 |  |  | 0d |  |
| 24 |  | Lập Bảng Kế Hoạch Kiểm Thử | 1d | 2024-04-12 | 2024-04-12 | 22 |  | 0d |  |
| 25 |  | Viết Và Tiến Hành Các Ca Kiểm Thử | 1d | 2024-04-15 | 2024-04-15 | 24 |  | 0d |  |
| 26 |  | Kiểm Thử Toàn Hệ Thống | 1d | 2024-04-16 | 2024-04-16 | 25 |  | 0d |  |
| 27 |  | Xác Định Và Sữa Lỗi | 2d | 2024-04-17 | 2024-04-19 | 26 |  | 0d |  |
| 28 |  | Đánh Giá Cuối Cùng | 1d | 2024-04-22 | 2024-04-22 | 27 |  | 0d |  |
| 29 |  | Hoàn Thành Kiểm Thử | 0d | 2024-04-23 | 2024-04-23 | 28 |  |  |  |
| 30 | 1.7 | **Bàn Giao** | 2d | 2024-04-23 | 2024-04-24 |  |  | 0d |  |
| 31 |  | Cài Đặt Phần Mềm | 1d | 2024-04-23 | 2024-04-23 | 29 |  | 0d |  |
| 32 |  | Hướng Dẫn Phầm Mềm | 1d | 2024-04-24 | 2024-04-24 | 31 |  | 0d |  |

## Version 2 (saved 2024-03-09)

Note of the change: Ai

Last finish stays 2024-04-24.

Changed:

| ID | Task | Start | Finish | Duration |
| --- | --- | --- | --- | --- |
| 5 | Thu Thập, Phân Tích Nhu Cầu Khách Hàng |  | 2024-02-23 → 2024-02-22 (-1d) | 3d → 2d |
| 6 | Lên Ý Tưởng, Phân Tích Thông Số Kĩ Thuật | 2024-02-26 → 2024-02-23 (-3d) |  | 3d → 4d |

## Version 3 (saved 2024-03-11)

Note of the change: AI

Last finish stays 2024-04-24.

Added:

| ID | Task | Duration | Start | Finish |
| --- | --- | --- | --- | --- |
| 19 | **Phân tích thuật toán cho từng chức năng hệ thống** | 0d | 2024-03-15 | 2024-03-15 |
| 20 | Phân tích và hiểu rõ các yêu câu của từng chức năng | 1d? | 2024-03-15 | 2024-03-15 |
| 21 | Xác định thuật toán và quy trình logic xử lý cho mỗi chức năng | 1d? | 2024-03-15 | 2024-03-15 |
| 22 | **Xác định ngôn ngữ lập trình, công cụ phát triển và triển khai thuật toán** | 0d | 2024-02-21 | 2024-02-21 |
| 23 | Chọn ngôn ngữ lập trình, công cụ phát triển và thư viện | 1d? | 2024-03-15 | 2024-03-15 |
| 24 | Triển khai xây dựng thuật toán cho các chức năng | 1d? | 2024-02-21 | 2024-02-21 |
| 25 | Kiểm tra tính logic xử lý của từng chức năng | 1d? | 2024-02-21 | 2024-02-21 |
| 26 | **Liên kết các chức năng, logic hóa hệ thống** | 0d | 2024-02-21 | 2024-02-21 |
| 27 | Kết nối các chức năng, đảm bảo tính logic hệ thống | 1d? | 2024-02-21 | 2024-02-21 |
| 28 | Kiểm tra tính logic, hoạt động của hệ thống và đảm bảo không có sự xung đột giữa các chức năng | 1d? | 2024-02-21 | 2024-02-21 |
| 29 | **Kiểm tra và xác định tính đúng đắn của thuật toán và quy trình logic của hệ thống** | 0d | 2024-02-21 | 2024-02-21 |
| 30 | Thực hiện các bước kiểm tra thuật toán và quy trình logic hệ thống | 1d? | 2024-02-21 | 2024-02-21 |
| 31 | Gỡ lỗi và sửa các lỗi phát sinh trong quá trình triển khai thuật toán | 1d? | 2024-02-21 | 2024-02-21 |
| 32 | **Viết báo cáo thuật toán, logic hệ thống** | 0d | 2024-02-21 | 2024-02-21 |
| 33 | Lập báo cáo chi tiết về các thuật toán được dùng trong mỗi chức năng | 1d? | 2024-02-21 | 2024-02-21 |
| 34 | Lập báo cáo cụ thể logic hoạt động của mỗi chức năng và nguyên lý hoạt động của các chức năng đó | 1d? | 2024-02-21 | 2024-02-21 |
| 36 | Thiết kế bảng, thành phần dữ liệu | 1d? | 2024-02-21 | 2024-02-21 |

Changed:

| ID | Task | Start | Finish | Duration | Complete | Total float |
| --- | --- | --- | --- | --- | --- | --- |
| 1 | **XÂY DỰNG HỆ THỐNG QUẢN LÝ KẾT NỐI VÀ CUNG CẤP GIA SƯ TP-HUẾ** |  |  |  | 4% → 5% |  |
| 17 | **Triển Khai** | 2024-03-15 → 2024-02-21 (-23d) |  | 20d → 37d |  | 0d → 8d |
| 18 | **Triển Khai Logic Hệ Thông** |  | 2024-03-21 → 2024-03-15 (-6d) | 5d → 0d |  | 0d → 10d |
| 35 | **Phát Triển Các Thành Phần CSDL** | 2024-03-22 → 2024-03-15 (-7d) | 2024-03-28 → 2024-03-15 (-13d) | 5d → 0d |  | 0d → 10d |
| 37 | Lập Trình Hệ Thống | 2024-03-29 → 2024-03-15 (-14d) | 2024-04-04 → 2024-03-21 (-14d) |  |  | 0d → 10d |
| 38 | Đánh Giá Và Tối Ưu Mã Nguồn | 2024-04-05 → 2024-03-22 (-14d) | 2024-04-11 → 2024-03-28 (-14d) |  |  | 0d → 10d |
